# Project_Schedule

How a schedule from MS Project changed from version to version. A marks actual dates.

## Version 1 (saved 2015-09-14)

Note of the change: update schedule & checklist

| ID | WBS | Task | Duration | Start | Finish | Predecessors | Total float | Constraint |
| --- | --- | --- | --- | --- | --- | --- | --- | --- |
| 1 | 1 | **Dandelion (DDL)** | 75d? | 2015-09-07 | 2015-12-18 |  | 0d |  |
| 2 | 1.1 | **Initiation** | 15d? | 2015-09-07 | 2015-09-25 |  | 0d |  |
| 3 |  | Form up team roles | 0.5d | 2015-09-07 | 2015-09-07 |  | 0d |  |
| 4 |  | Select project idea | 0.5d | 2015-09-07 | 2015-09-07 | 3 | 0d |  |
| 5 | 1.1.3 | **Develop project idea** | 1d? | 2015-09-08 | 2015-09-08 | 4 | 0d |  |
| 6 |  | Define project scope | 1d? | 2015-09-08 | 2015-09-08 |  | 0d |  |
| 7 |  | Define project features | 1d? | 2015-09-08 | 2015-09-08 |  | 0d |  |
| 8 |  | Kick-off meeting | 1d? | 2015-09-09 | 2015-09-09 | 5 | 0d |  |
| 9 | 1.1.5 | **Environment** | 2d? | 2015-09-10 | 2015-09-11 | 8 | 0d |  |
| 10 |  | Create guideline to install and use tools & environments | 0.5d? | 2015-09-10 | 2015-09-10 |  | 0d |  |
| 11 | 1.1.5.2 | **Install tools & environments** | 1d? | 2015-09-10 | 2015-09-11 | 10 | 0d |  |
| 12 |  | Install Visual Studio 2013 | 1d? | 2015-09-10 | 2015-09-11 |  | 0d |  |
| 13 |  | Install TortoiseGit | 1d? | 2015-09-10 | 2015-09-11 |  | 0d |  |
| 14 |  | Install Microsoft SQL Server 2010 | 1d? | 2015-09-10 | 2015-09-11 |  | 0d |  |
| 15 |  | Install Subline Text | 1d? | 2015-09-10 | 2015-09-11 |  | 0d |  |
| 16 |  | Trainning using tools & environments | 0.5d | 2015-09-11 | 2015-09-11 | 11 | 0d |  |
| 17 | 1.1.6 | **Technology Research** | 8d? | 2015-09-14 | 2015-09-23 | 16 | 0d |  |
| 18 |  | Study .net MVC 5 | 7d | 2015-09-14 | 2015-09-22 |  | 1d | start no earlier than 2015-09-14 |
| 19 |  | Study AngularJS | 7d | 2015-09-14 | 2015-09-22 |  | 1d |  |
| 20 |  | Study Bootstraps, HTML5 & CSS3 | 7d | 2015-09-14 | 2015-09-22 |  | 0d |  |
| 21 | 1.1.6.4 | **Define and study others technologies to be used in system** | 1d? | 2015-09-23 | 2015-09-23 | 20 | 0d |  |
| 22 |  | Code first migration | 1d | 2015-09-23 | 2015-09-23 |  | 0d |  |
| 23 |  | Restful API on .net MVC | 1d | 2015-09-23 | 2015-09-23 |  | 0d |  |
| 24 |  | Payment by BaoKim API | 1d? | 2015-09-23 | 2015-09-23 |  | 0d |  |
| 25 |  | Facebook Login API | 1d? | 2015-09-23 | 2015-09-23 |  | 0d |  |
| 26 | 1.1.7 | **Demo & Prototypes** | 2d? | 2015-09-24 | 2015-09-25 | 17 | 0d |  |
| 27 |  | Create Demo | 2d | 2015-09-24 | 2015-09-25 |  | 0d |  |
| 28 |  | Create Prototype | 1d? | 2015-09-24 | 2015-09-24 |  | 1d |  |
| 29 | 1.1.8 | **Project Introduction** | 1d | 2015-09-10 | 2015-09-10 | 8 | 4.5d |  |
| 30 |  | Create Project Introduction | 1d | 2015-09-10 | 2015-09-10 |  | 4.5d |  |
| 31 | 1.1.9 | **Project Plan** | 5d? | 2015-09-11 | 2015-09-17 | 29 | 4.5d |  |
| 32 |  | Create Project Schedule | 2d | 2015-09-11 | 2015-09-14 |  | 4.5d |  |
| 33 |  | Create Project Plan in .mmp file & MS word | 1d | 2015-09-15 | 2015-09-15 | 32 | 4.5d |  |
| 34 |  | Create CM Plan | 1d | 2015-09-16 | 2015-09-16 | 33 | 4.5d |  |
| 35 |  | Review Project Plan | 1d? | 2015-09-17 | 2015-09-17 | 34 | 4.5d |  |
| 36 | 1.1.10 | **User Requirement Specification** | 1.5d? | 2015-09-11 | 2015-09-14 | 29 | 8d |  |
| 37 |  | Create User Requirement Sepecification | 1d | 2015-09-11 | 2015-09-11 |  | 8d |  |
| 38 |  | Review User Requirement Specification | 0.5d? | 2015-09-14 | 2015-09-14 | 37 | 8d |  |
| 39 | 1.1.11 | **Q&A Sheet** | 1.5d? | 2015-09-11 | 2015-09-14 | 29 | 9.5d |  |
| 40 |  | Create Q&A sheet | 0.5d? | 2015-09-11 | 2015-09-11 |  | 9.5d |  |
| 41 |  | Review Q&A sheet | 0.5d? | 2015-09-11 | 2015-09-11 | 40 | 9.5d |  |
| 42 |  | Translate Q&A sheet to Japanese | 0.5d? | 2015-09-14 | 2015-09-14 | 41 | 9.5d |  |
| 43 |  | SRS/PP Review checklist | 0.5d? | 2015-09-18 | 2015-09-18 | 36, 31 | 4.5d |  |
| 44 |  | Create progress report 1 | 1d | 2015-09-18 | 2015-09-21 | 43 | 4.5d |  |
| 45 |  | Submit progress report 1 | 0d | 2015-09-21 | 2015-09-21 | 44 | 4.5d |  |
| 46 | 1.2 | **Solution** | 24.5d? | 2015-09-28 | 2015-10-30 | 2 | 0d |  |
| 47 | 1.2.1 | **Software Requirement Specification** | 2.5d? | 2015-09-28 | 2015-09-30 |  | 0d |  |
| 48 | 1.2.1.1 | **Non-functional Requirements Specification** | 1.5d? | 2015-09-28 | 2015-09-29 |  | 0d |  |
| 49 |  | Define Security Requirements | 0.5d? | 2015-09-28 | 2015-09-28 |  | 0d |  |
| 50 |  | Define Performane Requirements | 0.5d? | 2015-09-28 | 2015-09-28 | 49 | 0d |  |
| 51 |  | Define User-interface Requirements | 0.5d? | 2015-09-29 | 2015-09-29 | 50 | 0d |  |
| 52 | 1.2.1.2 | **Functional Requirements Specification** | 1d? | 2015-09-29 | 2015-09-30 | 48 | 0d |  |
| 53 |  | Define User Client Module functional Requirements | 0.5d? | 2015-09-29 | 2015-09-29 |  | 0d |  |
| 54 |  | Define Admin Module functional Requirments | 0.5d? | 2015-09-30 | 2015-09-30 | 53 | 0d |  |
| 55 | 1.2.2 | **System Design** | 9d? | 2015-09-30 | 2015-10-13 | 47 | 0d |  |
| 56 |  | Create design review checklist | 1d? | 2015-09-30 | 2015-10-01 |  | 0d |  |
| 57 | 1.2.2.2 | **Architectural Design** | 3d? | 2015-10-01 | 2015-10-06 | 56 | 0d |  |
| 58 |  | Define architectural design | 1d | 2015-10-01 | 2015-10-02 |  | 0d |  |
| 59 |  | Define system features | 1d? | 2015-10-02 | 2015-10-05 | 58 | 0d |  |
| 60 |  | Study and choose suitable architectural design | 0.5d? | 2015-10-05 | 2015-10-05 | 59 | 0d |  |
| 61 |  | Review architectural design | 0.5d? | 2015-10-06 | 2015-10-06 | 60 | 0d |  |
| 62 |  | Complete Architectural Design version 1.0 | 0d | 2015-10-06 | 2015-10-06 | 61 | 0d |  |
| 63 | 1.2.2.3 | **Screen design** | 4d? | 2015-10-01 | 2015-10-07 | 56 | 17d |  |
| 64 |  | Create Screen Flow document | 1d? | 2015-10-01 | 2015-10-02 |  | 17d |  |
| 65 |  | Create client screen design | 1d? | 2015-10-02 | 2015-10-05 | 64 | 17d |  |
| 66 |  | Create admin screen design | 1d? | 2015-10-05 | 2015-10-06 | 65 | 17d |  |
| 67 |  | Review screen design | 1d? | 2015-10-06 | 2015-10-07 | 66 | 17d |  |
| 68 | 1.2.2.4 | **Database design** | 3d? | 2015-10-01 | 2015-10-06 | 56 | 0d |  |
| 69 |  | Create database design | 2d | 2015-10-01 | 2015-10-05 |  | 0d |  |
| 70 |  | Review database design | 1d? | 2015-10-05 | 2015-10-06 | 69 | 0d |  |

| ID | WBS | Task | Duration | Start | Finish | Predecessors | Total float |
| --- | --- | --- | --- | --- | --- | --- | --- |
| 71 |  | Complete database design | 0d | 2015-10-01 | 2015-10-01 |  | 3d |
| 72 | 1.2.2.5 | **Class/Component Design** | 5d? | 2015-10-06 | 2015-10-13 | 57, 68 | 0d |
| 73 |  | Define Class and Component | 1d | 2015-10-06 | 2015-10-07 |  | 0d |
| 74 |  | Create Class/component design | 3d | 2015-10-07 | 2015-10-12 | 73 | 0d |
| 75 |  | Review class/component design | 1d? | 2015-10-12 | 2015-10-13 | 74 | 0d |
| 76 |  | Create progress report 2 | 2d | 2015-10-13 | 2015-10-15 | 72 | 0d |
| 77 |  | Submit progress report 2 | 0d | 2015-10-15 | 2015-10-15 | 76 | 0d |
| 78 | 1.2.5 | **Testing** | 10d? | 2015-10-15 | 2015-10-29 | 77 | 0d |
| 79 |  | Create test plan/case checklists | 1d? | 2015-10-15 | 2015-10-16 |  | 0d |
| 80 |  | Create test plan | 2d | 2015-10-16 | 2015-10-20 | 79 | 0d |
| 81 |  | Review test plan | 1d? | 2015-10-20 | 2015-10-21 | 80 | 0d |
| 82 | 1.2.5.4 | **Test cases** | 6d? | 2015-10-21 | 2015-10-29 | 81 | 0d |
| 83 | 1.2.5.4.1 | **Integration test case** | 3d? | 2015-10-21 | 2015-10-26 |  | 0d |
| 84 |  | Create integration test case | 2d | 2015-10-21 | 2015-10-23 |  | 0d |
| 85 |  | Review integration test case | 1d? | 2015-10-23 | 2015-10-26 | 84 | 0d |
| 86 | 1.2.5.4.2 | **System test case** | 3d? | 2015-10-26 | 2015-10-29 | 83 | 0d |
| 87 |  | Create system test case | 2d | 2015-10-26 | 2015-10-28 |  | 0d |
| 88 |  | Review system test case | 1d? | 2015-10-28 | 2015-10-29 | 87 | 0d |
| 89 |  | Create progress report 3 | 1d? | 2015-10-29 | 2015-10-30 | 78 | 0d |
| 90 |  | Submit progress report 3 | 0d | 2015-10-30 | 2015-10-30 | 89 | 0d |
| 91 | 1.3 | **Construction** | 29.5d? | 2015-10-30 | 2015-12-10 | 46 | 0d |
| 92 | 1.3.1 | **Define Coding Standards** | 1d? | 2015-10-30 | 2015-11-02 |  | 0d |
| 93 |  | Create Coding Convention | 1d? | 2015-10-30 | 2015-11-02 |  | 0d |
| 94 |  | Create Code & UT Test review checklist | 1d? | 2015-10-30 | 2015-11-02 |  | 0d |
| 95 | 1.3.2 | **Screen Design** | 1d? | 2015-11-02 | 2015-11-03 | 92 | 0d |
| 96 |  | Refine screen design document | 1d? | 2015-11-02 | 2015-11-03 |  | 0d |
| 97 | 1.3.3 | **Coding & Unit test** | 22d? | 2015-11-02 | 2015-12-02 | 92 | 5d |
| 98 |  | Structure core modules & source code common | 2d | 2015-11-02 | 2015-11-04 |  | 5d |
| 99 | 1.3.3.2 | **Client User Module** | 12d? | 2015-11-04 | 2015-11-20 | 98, 95 | 5d |
| 100 |  | Home Page Module | 2d | 2015-11-04 | 2015-11-06 |  | 5d |
| 101 |  | Login/ Logout Module | 1d? | 2015-11-06 | 2015-11-09 | 100 | 5d |
| 102 | 1.3.3.2.3 | **Project module** | 4d | 2015-11-09 | 2015-11-13 | 101 | 5d |
| 103 |  | Create/manage a project Module | 2d | 2015-11-09 | 2015-11-11 |  | 5d |
| 104 |  | View/Back a project Module | 2d | 2015-11-11 | 2015-11-13 | 103 | 5d |
| 105 |  | User Personal Page Module | 3d | 2015-11-13 | 2015-11-18 | 102 | 5d |
| 106 |  | Search Module | 1d? | 2015-11-18 | 2015-11-19 | 105 | 5d |
| 107 |  | Message Module | 1d | 2015-11-19 | 2015-11-20 | 106 | 5d |
| 108 | 1.3.3.3 | **Admin Module** | 8d? | 2015-11-20 | 2015-12-02 | 99 | 5d |
| 109 |  | Login/ Logout module | 1d? | 2015-11-20 | 2015-11-23 |  | 5d |
| 110 |  | Manage Users Module | 2d | 2015-11-23 | 2015-11-25 | 109 | 5d |
| 111 |  | Manage Projects Module | 2d | 2015-11-25 | 2015-11-27 | 110 | 5d |
| 112 |  | Manage Backings Module | 1d? | 2015-11-27 | 2015-11-30 | 111 | 5d |
| 113 |  | Manage Categories Module | 1d? | 2015-11-30 | 2015-12-01 | 112 | 5d |
| 114 |  | Mangage Silder Module | 1d? | 2015-12-01 | 2015-12-02 | 113 | 5d |
| 115 |  | Complete Coding | 0d | 2015-12-02 | 2015-12-02 | 99, 108 | 5d |
| 116 |  | Create Progress Report 4 | 1d? | 2015-12-02 | 2015-12-03 | 95, 97 | 5.5d |
| 117 |  | Submit Progress Report 4 | 0d | 2015-12-03 | 2015-12-03 | 116 | 5.5d |
| 118 | 1.3.6 | **Testing** | 26d? | 2015-11-03 | 2015-12-09 |  | 0d |
| 119 |  | Update Test Case | 1d? | 2015-11-03 | 2015-11-04 | 95 | 0d |
| 120 | 1.3.6.2 | **Execute Test Round 1** | 12d | 2015-11-04 | 2015-11-20 | 119 | 0d |
| 121 |  | Execute Component Test | 2d | 2015-11-04 | 2015-11-06 |  | 0d |
| 122 |  | Fix bug Component Test | 2d | 2015-11-06 | 2015-11-10 | 121 | 0d |
| 123 |  | Execute Integration Test | 2d | 2015-11-10 | 2015-11-12 | 122 | 0d |
| 124 |  | Fix bug Integration Test | 2d | 2015-11-12 | 2015-11-16 | 123 | 0d |
| 125 |  | Execute System Test | 2d | 2015-11-16 | 2015-11-18 | 124 | 0d |
| 126 |  | Fix bug System Test | 2d | 2015-11-18 | 2015-11-20 | 125 | 0d |
| 127 |  | Update Test Case | 1d | 2015-11-20 | 2015-11-23 | 120 | 0d |
| 128 | 1.3.6.4 | **Execute Test Round 2** | 11d | 2015-11-23 | 2015-12-08 | 127 | 0d |
| 129 |  | Execute Component Test | 2d | 2015-11-23 | 2015-11-25 |  | 0d |
| 130 |  | Fix bug Component Test | 2d | 2015-11-25 | 2015-11-27 | 129 | 0d |
| 131 |  | Execute Integration Test | 2d | 2015-11-27 | 2015-12-01 | 130 | 0d |
| 132 |  | Fix bug Integration Test | 2d | 2015-12-01 | 2015-12-03 | 131 | 0d |
| 133 |  | Execute System Test | 1d | 2015-12-03 | 2015-12-04 | 132 | 0d |
| 134 |  | Fix bug System Test | 2d | 2015-12-04 | 2015-12-08 | 133 | 0d |
| 135 |  | Create Test Report | 1d | 2015-12-08 | 2015-12-09 | 120, 128 | 0d |
| 136 | 1.3.7 | **Quality Control** | 0.5d? | 2015-12-09 | 2015-12-09 | 118, 97 | 0d |
| 137 |  | Create Quality Report | 0.5d? | 2015-12-09 | 2015-12-09 |  | 0d |
| 138 |  | Review Quality Report | 0.5d? | 2015-12-09 | 2015-12-09 |  | 0d |
| 139 |  | Create Progress Report 5 | 1d? | 2015-12-10 | 2015-12-10 | 136 | 0d |
| 140 |  | Submit Progress Report 5 | 0d | 2015-12-10 | 2015-12-10 | 139 | 0d |

| ID | WBS | Task | Duration | Start | Finish | Predecessors | Total float |
| --- | --- | --- | --- | --- | --- | --- | --- |
| 141 | 1.4 | **Termination** | 6d? | 2015-12-11 | 2015-12-18 | 91 | 0d |
| 142 | 1.4.1 | **Final Report Document** | 4d? | 2015-12-11 | 2015-12-16 |  | 0d |
| 143 |  | Create Final Report document | 1d? | 2015-12-11 | 2015-12-11 |  | 0d |
| 144 |  | Create Installing Guide | 1d | 2015-12-14 | 2015-12-14 | 143 | 0d |
| 145 |  | Create User Guideline | 0.5d? | 2015-12-15 | 2015-12-15 | 144 | 0d |
| 146 |  | Create Project Result Assessment | 0.5d? | 2015-12-15 | 2015-12-15 | 145 | 0d |
| 147 |  | Create Slides for Final Presentation | 1d | 2015-12-16 | 2015-12-16 | 146 | 0d |
| 148 |  | Submit all Final Documents and Source codes | 0d | 2015-12-16 | 2015-12-16 | 147 | 0d |
| 149 | 1.4.2 | **Pre-closing** | 1d? | 2015-12-17 | 2015-12-17 |  | 0d |
| 150 |  | Trainning presentation | 1d? | 2015-12-17 | 2015-12-17 | 142 | 0d |
| 151 | 1.4.3 | **Closing** | 1d? | 2015-12-18 | 2015-12-18 | 150 | 0d |
| 152 |  | Presentation for Capstone Project | 1d? | 2015-12-18 | 2015-12-18 |  | 0d |
| 153 |  | Complete Project | 0d | 2015-12-18 | 2015-12-18 | 152 | 0d |

## Version 2 (saved 2015-09-16)

Note of the change: update introduction, schedule, project plan

Last finish stays 2015-12-18.

Changed:

| ID | Task | Start | Finish | Total float | Predecessors |
| --- | --- | --- | --- | --- | --- |
| 71 | Complete database design | 2015-10-01 → 2015-10-06 (+5d) | 2015-10-01 → 2015-10-06 (+5d) | 3d → 0d | none → 70 |

## Version 3 (saved 2015-09-17)

Note of the change: update initiation phase projectschedule file

Last finish 2015-12-18 → 2015-12-11 (-7d).

Added:

| ID | Task | Duration | Start | Finish | Predecessors | Resources |
| --- | --- | --- | --- | --- | --- | --- |
| 15 | Install Microsoft Project 2013 | 2h | 2015-09-11 | 2015-09-11 | 14 | TEAM |
| 28 | Review Project Introduction | 0.5d | 2015-09-14 | 2015-09-14 | 27 | TrungCV |
| 29 | Update Project Introduction | 0.5d | 2015-09-15 | 2015-09-15 | 28 | HuyNM |
| 30 | Complete Project Introduction | 0d | 2015-09-15 | 2015-09-15 | 29 |  |
| 36 | Update Project Plan, CMPlan, Schedule | 1d? | 2015-09-17 | 2015-09-18 | 35 | MaiCTP; ManhLN |
| 37 | Complete Project Plan | 0d | 2015-09-17 | 2015-09-17 | 35 |  |
| 41 | Update User Requirement Specification | 0.5d? | 2015-09-18 | 2015-09-18 | 40 | ChinhVC |
| 42 | Complete User Requirement Specification | 0d | 2015-09-18 | 2015-09-18 | 41 |  |
| 50 | **Technology Research (Continue)** | 1d? | 2015-09-21 | 2015-09-21 |  |  |

Removed: 21 Define and study others technologies to be used in system

Changed:

| ID | Task | Start | Finish | Duration | Total float | Predecessors | Other |
| --- | --- | --- | --- | --- | --- | --- | --- |
| 1 | **Dandelion (DDL)** |  | 2015-12-18 → 2015-12-11 (-7d) | 75d? → 70d? |  |  |  |
| 2 | **Initiation** |  | 2015-09-25 → 2015-09-18 (-7d) | 15d? → 10d? |  |  |  |
| 5 | **Develop project idea** |  |  | 1d? → 1d |  |  |  |
| 6 | Define project scope |  |  | 1d? → 0.5d |  |  |  |
| 7 | Define project features |  |  | 1d? → 0.5d |  | none → 6 |  |
| 10 | Create guideline to install and use tools & environments |  |  |  | 0d → 4d |  | resources ManhLN → ChinhVC |
| 11 | **Install tools & environments** |  |  | 1d? → 1d | 0d → 4d |  |  |
| 12 | Install TortoiseGit |  | 2015-09-11 → 2015-09-10 (-1d) | 1d? → 0.5h | 0d → 4d |  |  |
| 13 | Install Visual Studio 2013 |  | 2015-09-11 → 2015-09-10 (-1d) | 1d? → 3h | 0d → 4d | none → 12 |  |
| 14 | Install Microsoft SQL Server 2010 |  |  | 1d? → 2h | 0d → 4d | none → 13 |  |
| 16 | Install Sublime Text | 2015-09-10 → 2015-09-11 (+1d) |  | 1d? → 0.5h | 0d → 4d | none → 15 | was named Install Subline Text |
| 17 | Trainning using tools & environments |  |  |  | 0d → 4d |  | resources HuyNM → TEAM |
| 18 | **Technology Research (not complete)** |  | 2015-09-23 → 2015-09-14 (-9d) | 8d? → 1d | 0d → 4d | 17 → 9 | was named Technology Research |
| 19 | Study .net MVC 5 |  | 2015-09-22 → 2015-09-14 (-8d) | 7d → 1d | 1d → 4d |  |  |
| 20 | Study AngularJS |  | 2015-09-22 → 2015-09-14 (-8d) | 7d → 1d | 1d → 4d |  |  |
| 21 | Study Bootstraps, HTML5 & CSS3 |  | 2015-09-22 → 2015-09-14 (-8d) | 7d → 1d | 0d → 4d |  |  |
| 22 | **Demo & Prototypes (not complete)** | 2015-09-24 → 2015-09-07 (-17d) | 2015-09-25 → 2015-09-08 (-17d) |  | 0d → 8d | 18 → none | was named Demo & Prototypes |
| 23 | Create Demo | 2015-09-24 → 2015-09-07 (-17d) | 2015-09-25 → 2015-09-08 (-17d) |  | 0d → 8d |  |  |
| 24 | Create Prototype | 2015-09-24 → 2015-09-07 (-17d) | 2015-09-24 → 2015-09-07 (-17d) |  | 1d → 9d |  |  |
| 25 | SRS/PP Review checklist | 2015-09-18 → 2015-09-10 (-8d) | 2015-09-18 → 2015-09-10 (-8d) |  | 4.5d → 0d | 38, 31 → 8 | resources ManhLN → ChinhVC |
| 26 | **Project Introduction** |  | 2015-09-10 → 2015-09-15 (+5d) | 1d → 3d | 4.5d → 0d | 8 → 25 |  |
| 27 | Create Project Introduction |  | 2015-09-10 → 2015-09-14 (+4d) | 1d → 2d | 4.5d → 0d |  |  |
| 31 | **Project Plan** | 2015-09-11 → 2015-09-10 (-1d) | 2015-09-17 → 2015-09-18 (+1d) | 5d? → 6d? | 4.5d → 0d | 26 → 25 |  |
| 32 | Create Project Plan in MS Word | 2015-09-15 → 2015-09-10 (-5d) | 2015-09-15 → 2015-09-11 (-4d) | 1d → 1.5d | 4.5d → 0d | 33 → none | was named Create Project Plan in .mmp file & MS word; resources AnhDD → ManhLN |
| 33 | Create Project Schedule in .mmp file | 2015-09-11 → 2015-09-14 (+3d) | 2015-09-14 → 2015-09-16 (+2d) | 2d → 3d | 4.5d → 0d | none → 32 | was named Create Project Schedule |
| 34 | Create CM Plan | 2015-09-16 → 2015-09-10 (-6d) | 2015-09-16 → 2015-09-14 (-2d) | 1d → 2d | 4.5d → 2.5d | 32 → none |  |
| 35 | Review Project Plan, CMPlan, Schedule |  |  | 1d? → 0.5d | 4.5d → 0d | 34 → 34, 33 | was named Review Project Plan; resources ManhLN → ManhLN; MaiCTP |
| 38 | **User Requirement Specification** | 2015-09-11 → 2015-09-15 (+4d) | 2015-09-14 → 2015-09-18 (+4d) | 1.5d? → 3d? | 8d → 0d |  |  |
| 39 | Create User Requirement Sepecification | 2015-09-11 → 2015-09-15 (+4d) | 2015-09-11 → 2015-09-17 (+6d) | 1d → 2d | 8d → 0d |  |  |
| 40 | Review User Requirement Specification | 2015-09-14 → 2015-09-17 (+3d) | 2015-09-14 → 2015-09-17 (+3d) |  | 8d → 0d |  | resources ManhLN → AnhDD |
| 43 | **Q&A Sheet** | 2015-09-11 → 2015-09-10 (-1d) | 2015-09-14 → 2015-09-15 (+1d) | 1.5d? → 3.5d? | 9.5d → 2.5d | 26 → 25 |  |
| 44 | Create Q&A sheet | 2015-09-11 → 2015-09-10 (-1d) | 2015-09-11 → 2015-09-14 (+3d) | 0.5d? → 2d | 9.5d → 2.5d |  |  |
| 45 | Review Q&A sheet | 2015-09-11 → 2015-09-14 (+3d) | 2015-09-11 → 2015-09-14 (+3d) |  | 9.5d → 2.5d |  | resources ManhLN → HuyNM |
| 46 | Translate Q&A sheet to Japanese | 2015-09-14 → 2015-09-15 (+1d) | 2015-09-14 → 2015-09-15 (+1d) | 0.5d? → 1d | 9.5d → 2.5d |  |  |
| 47 | Create progress report 1 |  | 2015-09-21 → 2015-09-18 (-3d) | 1d → 0.5d | 4.5d → 0d | 25 → 26, 31, 38, 43 |  |
| 48 | Submit progress report 1 | 2015-09-21 → 2015-09-18 (-3d) | 2015-09-21 → 2015-09-18 (-3d) |  | 4.5d → 0d |  |  |
| 49 | **Solution** | 2015-09-28 → 2015-09-21 (-7d) | 2015-10-30 → 2015-10-23 (-7d) |  |  |  |  |
| 51 | Code first migration | 2015-09-23 → 2015-09-21 (-2d) | 2015-09-23 → 2015-09-21 (-2d) |  | 0d → 23.5d |  |  |
| 52 | Restful API on .net MVC | 2015-09-23 → 2015-09-21 (-2d) | 2015-09-23 → 2015-09-21 (-2d) |  | 0d → 23.5d |  |  |
| 53 | Payment by BaoKim API | 2015-09-23 → 2015-09-21 (-2d) | 2015-09-23 → 2015-09-21 (-2d) |  | 0d → 23.5d |  |  |
| 54 | Facebook Login API | 2015-09-23 → 2015-09-21 (-2d) | 2015-09-23 → 2015-09-21 (-2d) |  | 0d → 23.5d |  |  |
| 55 | **Software Requirement Specification** | 2015-09-28 → 2015-09-21 (-7d) | 2015-09-30 → 2015-09-23 (-7d) |  |  |  |  |
| 56 | **Non-functional Requirements Specification** | 2015-09-28 → 2015-09-21 (-7d) | 2015-09-29 → 2015-09-22 (-7d) |  |  |  |  |
| 57 | Define Security Requirements | 2015-09-28 → 2015-09-21 (-7d) | 2015-09-28 → 2015-09-21 (-7d) |  |  |  |  |
| 58 | Define Performane Requirements | 2015-09-28 → 2015-09-21 (-7d) | 2015-09-28 → 2015-09-21 (-7d) |  |  |  |  |
| 59 | Define User-interface Requirements | 2015-09-29 → 2015-09-22 (-7d) | 2015-09-29 → 2015-09-22 (-7d) |  |  |  |  |
| 60 | **Functional Requirements Specification** | 2015-09-29 → 2015-09-22 (-7d) | 2015-09-30 → 2015-09-23 (-7d) |  |  |  |  |
| 61 | Define User Client Module functional Requirements | 2015-09-29 → 2015-09-22 (-7d) | 2015-09-29 → 2015-09-22 (-7d) |  |  |  |  |
| 62 | Define Admin Module functional Requirments | 2015-09-30 → 2015-09-23 (-7d) | 2015-09-30 → 2015-09-23 (-7d) |  |  |  |  |
| 63 | **System Design** | 2015-09-30 → 2015-09-23 (-7d) | 2015-10-13 → 2015-10-06 (-7d) |  |  |  |  |
| 64 | Create design review checklist | 2015-09-30 → 2015-09-23 (-7d) | 2015-10-01 → 2015-09-24 (-7d) |  |  |  |  |
| 65 | **Architectural Design** | 2015-10-01 → 2015-09-24 (-7d) | 2015-10-06 → 2015-09-29 (-7d) |  |  |  |  |
| 66 | Define architectural design | 2015-10-01 → 2015-09-24 (-7d) | 2015-10-02 → 2015-09-25 (-7d) |  |  |  |  |
| 67 | Define system features | 2015-10-02 → 2015-09-25 (-7d) | 2015-10-05 → 2015-09-28 (-7d) |  |  |  |  |
| 68 | Study and choose suitable architectural design | 2015-10-05 → 2015-09-28 (-7d) | 2015-10-05 → 2015-09-28 (-7d) |  |  |  |  |
| 69 | Review architectural design | 2015-10-06 → 2015-09-29 (-7d) | 2015-10-06 → 2015-09-29 (-7d) |  |  |  |  |
| 70 | Complete Architectural Design version 1.0 | 2015-10-06 → 2015-09-29 (-7d) | 2015-10-06 → 2015-09-29 (-7d) |  |  |  |  |
| 71 | **Screen design** | 2015-10-01 → 2015-09-24 (-7d) | 2015-10-07 → 2015-09-30 (-7d) |  |  |  |  |
| 72 | Create Screen Flow document | 2015-10-01 → 2015-09-24 (-7d) | 2015-10-02 → 2015-09-25 (-7d) |  |  |  |  |
| 73 | Create client screen design | 2015-10-02 → 2015-09-25 (-7d) | 2015-10-05 → 2015-09-28 (-7d) |  |  |  |  |
| 74 | Create admin screen design | 2015-10-05 → 2015-09-28 (-7d) | 2015-10-06 → 2015-09-29 (-7d) |  |  |  |  |
| 75 | Review screen design | 2015-10-06 → 2015-09-29 (-7d) | 2015-10-07 → 2015-09-30 (-7d) |  |  |  |  |
| 76 | **Database design** | 2015-10-01 → 2015-09-24 (-7d) | 2015-10-06 → 2015-09-29 (-7d) |  |  |  |  |
| 77 | Create database design | 2015-10-01 → 2015-09-24 (-7d) | 2015-10-05 → 2015-09-28 (-7d) |  |  |  |  |
| 78 | Review database design | 2015-10-05 → 2015-09-28 (-7d) | 2015-10-06 → 2015-09-29 (-7d) |  |  |  |  |
| 79 | Complete database design | 2015-10-06 → 2015-09-29 (-7d) | 2015-10-06 → 2015-09-29 (-7d) |  |  |  |  |
| 80 | **Class/Component Design** | 2015-10-06 → 2015-09-29 (-7d) | 2015-10-13 → 2015-10-06 (-7d) |  |  |  |  |
| 81 | Define Class and Component | 2015-10-06 → 2015-09-29 (-7d) | 2015-10-07 → 2015-09-30 (-7d) |  |  |  |  |
| 82 | Create Class/component design | 2015-10-07 → 2015-09-30 (-7d) | 2015-10-12 → 2015-10-05 (-7d) |  |  |  |  |
| 83 | Review class/component design | 2015-10-12 → 2015-10-05 (-7d) | 2015-10-13 → 2015-10-06 (-7d) |  |  |  |  |

| ID | Task | Start | Finish |
| --- | --- | --- | --- |
| 84 | Create progress report 2 | 2015-10-13 → 2015-10-06 (-7d) | 2015-10-15 → 2015-10-08 (-7d) |
| 85 | Submit progress report 2 | 2015-10-15 → 2015-10-08 (-7d) | 2015-10-15 → 2015-10-08 (-7d) |
| 86 | **Testing** | 2015-10-15 → 2015-10-08 (-7d) | 2015-10-29 → 2015-10-22 (-7d) |
| 87 | Create test plan/case checklists | 2015-10-15 → 2015-10-08 (-7d) | 2015-10-16 → 2015-10-09 (-7d) |
| 88 | Create test plan | 2015-10-16 → 2015-10-09 (-7d) | 2015-10-20 → 2015-10-13 (-7d) |
| 89 | Review test plan | 2015-10-20 → 2015-10-13 (-7d) | 2015-10-21 → 2015-10-14 (-7d) |
| 90 | **Test cases** | 2015-10-21 → 2015-10-14 (-7d) | 2015-10-29 → 2015-10-22 (-7d) |
| 91 | **Integration test case** | 2015-10-21 → 2015-10-14 (-7d) | 2015-10-26 → 2015-10-19 (-7d) |
| 92 | Create integration test case | 2015-10-21 → 2015-10-14 (-7d) | 2015-10-23 → 2015-10-16 (-7d) |
| 93 | Review integration test case | 2015-10-23 → 2015-10-16 (-7d) | 2015-10-26 → 2015-10-19 (-7d) |
| 94 | **System test case** | 2015-10-26 → 2015-10-19 (-7d) | 2015-10-29 → 2015-10-22 (-7d) |
| 95 | Create system test case | 2015-10-26 → 2015-10-19 (-7d) | 2015-10-28 → 2015-10-21 (-7d) |
| 96 | Review system test case | 2015-10-28 → 2015-10-21 (-7d) | 2015-10-29 → 2015-10-22 (-7d) |
| 97 | Create progress report 3 | 2015-10-29 → 2015-10-22 (-7d) | 2015-10-30 → 2015-10-23 (-7d) |
| 98 | Submit progress report 3 | 2015-10-30 → 2015-10-23 (-7d) | 2015-10-30 → 2015-10-23 (-7d) |
| 99 | **Construction** | 2015-10-30 → 2015-10-23 (-7d) | 2015-12-10 → 2015-12-03 (-7d) |
| 100 | **Define Coding Standards** | 2015-10-30 → 2015-10-23 (-7d) | 2015-11-02 → 2015-10-26 (-7d) |
| 101 | Create Coding Convention | 2015-10-30 → 2015-10-23 (-7d) | 2015-11-02 → 2015-10-26 (-7d) |
| 102 | Create Code & UT Test review checklist | 2015-10-30 → 2015-10-23 (-7d) | 2015-11-02 → 2015-10-26 (-7d) |
| 103 | **Screen Design** | 2015-11-02 → 2015-10-26 (-7d) | 2015-11-03 → 2015-10-27 (-7d) |
| 104 | Refine screen design document | 2015-11-02 → 2015-10-26 (-7d) | 2015-11-03 → 2015-10-27 (-7d) |
| 105 | **Coding & Unit test** | 2015-11-02 → 2015-10-26 (-7d) | 2015-12-02 → 2015-11-25 (-7d) |
| 106 | Structure core modules & source code common | 2015-11-02 → 2015-10-26 (-7d) | 2015-11-04 → 2015-10-28 (-7d) |
| 107 | **Client User Module** | 2015-11-04 → 2015-10-28 (-7d) | 2015-11-20 → 2015-11-13 (-7d) |
| 108 | Home Page Module | 2015-11-04 → 2015-10-28 (-7d) | 2015-11-06 → 2015-10-30 (-7d) |
| 109 | Login/ Logout Module | 2015-11-06 → 2015-10-30 (-7d) | 2015-11-09 → 2015-11-02 (-7d) |
| 110 | **Project module** | 2015-11-09 → 2015-11-02 (-7d) | 2015-11-13 → 2015-11-06 (-7d) |
| 111 | Create/manage a project Module | 2015-11-09 → 2015-11-02 (-7d) | 2015-11-11 → 2015-11-04 (-7d) |
| 112 | View/Back a project Module | 2015-11-11 → 2015-11-04 (-7d) | 2015-11-13 → 2015-11-06 (-7d) |
| 113 | User Personal Page Module | 2015-11-13 → 2015-11-06 (-7d) | 2015-11-18 → 2015-11-11 (-7d) |
| 114 | Search Module | 2015-11-18 → 2015-11-11 (-7d) | 2015-11-19 → 2015-11-12 (-7d) |
| 115 | Message Module | 2015-11-19 → 2015-11-12 (-7d) | 2015-11-20 → 2015-11-13 (-7d) |
| 116 | **Admin Module** | 2015-11-20 → 2015-11-13 (-7d) | 2015-12-02 → 2015-11-25 (-7d) |
| 117 | Login/ Logout module | 2015-11-20 → 2015-11-13 (-7d) | 2015-11-23 → 2015-11-16 (-7d) |
| 118 | Manage Users Module | 2015-11-23 → 2015-11-16 (-7d) | 2015-11-25 → 2015-11-18 (-7d) |
| 119 | Manage Projects Module | 2015-11-25 → 2015-11-18 (-7d) | 2015-11-27 → 2015-11-20 (-7d) |
| 120 | Manage Backings Module | 2015-11-27 → 2015-11-20 (-7d) | 2015-11-30 → 2015-11-23 (-7d) |
| 121 | Manage Categories Module | 2015-11-30 → 2015-11-23 (-7d) | 2015-12-01 → 2015-11-24 (-7d) |
| 122 | Mangage Silder Module | 2015-12-01 → 2015-11-24 (-7d) | 2015-12-02 → 2015-11-25 (-7d) |
| 123 | Complete Coding | 2015-12-02 → 2015-11-25 (-7d) | 2015-12-02 → 2015-11-25 (-7d) |
| 124 | Create Progress Report 4 | 2015-12-02 → 2015-11-25 (-7d) | 2015-12-03 → 2015-11-26 (-7d) |
| 125 | Submit Progress Report 4 | 2015-12-03 → 2015-11-26 (-7d) | 2015-12-03 → 2015-11-26 (-7d) |
| 126 | **Testing** | 2015-11-03 → 2015-10-27 (-7d) | 2015-12-09 → 2015-12-02 (-7d) |
| 127 | Update Test Case | 2015-11-03 → 2015-10-27 (-7d) | 2015-11-04 → 2015-10-28 (-7d) |
| 128 | **Execute Test Round 1** | 2015-11-04 → 2015-10-28 (-7d) | 2015-11-20 → 2015-11-13 (-7d) |
| 129 | Execute Component Test | 2015-11-04 → 2015-10-28 (-7d) | 2015-11-06 → 2015-10-30 (-7d) |
| 130 | Fix bug Component Test | 2015-11-06 → 2015-10-30 (-7d) | 2015-11-10 → 2015-11-03 (-7d) |
| 131 | Execute Integration Test | 2015-11-10 → 2015-11-03 (-7d) | 2015-11-12 → 2015-11-05 (-7d) |
| 132 | Fix bug Integration Test | 2015-11-12 → 2015-11-05 (-7d) | 2015-11-16 → 2015-11-09 (-7d) |
| 133 | Execute System Test | 2015-11-16 → 2015-11-09 (-7d) | 2015-11-18 → 2015-11-11 (-7d) |
| 134 | Fix bug System Test | 2015-11-18 → 2015-11-11 (-7d) | 2015-11-20 → 2015-11-13 (-7d) |
| 135 | Update Test Case | 2015-11-20 → 2015-11-13 (-7d) | 2015-11-23 → 2015-11-16 (-7d) |
| 136 | **Execute Test Round 2** | 2015-11-23 → 2015-11-16 (-7d) | 2015-12-08 → 2015-12-01 (-7d) |
| 137 | Execute Component Test | 2015-11-23 → 2015-11-16 (-7d) | 2015-11-25 → 2015-11-18 (-7d) |
| 138 | Fix bug Component Test | 2015-11-25 → 2015-11-18 (-7d) | 2015-11-27 → 2015-11-20 (-7d) |
| 139 | Execute Integration Test | 2015-11-27 → 2015-11-20 (-7d) | 2015-12-01 → 2015-11-24 (-7d) |
| 140 | Fix bug Integration Test | 2015-12-01 → 2015-11-24 (-7d) | 2015-12-03 → 2015-11-26 (-7d) |
| 141 | Execute System Test | 2015-12-03 → 2015-11-26 (-7d) | 2015-12-04 → 2015-11-27 (-7d) |
| 142 | Fix bug System Test | 2015-12-04 → 2015-11-27 (-7d) | 2015-12-08 → 2015-12-01 (-7d) |
| 143 | Create Test Report | 2015-12-08 → 2015-12-01 (-7d) | 2015-12-09 → 2015-12-02 (-7d) |
| 144 | **Quality Control** | 2015-12-09 → 2015-12-02 (-7d) | 2015-12-09 → 2015-12-02 (-7d) |
| 145 | Create Quality Report | 2015-12-09 → 2015-12-02 (-7d) | 2015-12-09 → 2015-12-02 (-7d) |
| 146 | Review Quality Report | 2015-12-09 → 2015-12-02 (-7d) | 2015-12-09 → 2015-12-02 (-7d) |
| 147 | Create Progress Report 5 | 2015-12-10 → 2015-12-03 (-7d) | 2015-12-10 → 2015-12-03 (-7d) |
| 148 | Submit Progress Report 5 | 2015-12-10 → 2015-12-03 (-7d) | 2015-12-10 → 2015-12-03 (-7d) |
| 149 | **Termination** | 2015-12-11 → 2015-12-04 (-7d) | 2015-12-18 → 2015-12-11 (-7d) |
| 150 | **Final Report Document** | 2015-12-11 → 2015-12-04 (-7d) | 2015-12-16 → 2015-12-09 (-7d) |
| 151 | Create Final Report document | 2015-12-11 → 2015-12-04 (-7d) | 2015-12-11 → 2015-12-04 (-7d) |
| 152 | Create Installing Guide | 2015-12-14 → 2015-12-07 (-7d) | 2015-12-14 → 2015-12-07 (-7d) |
| 153 | Create User Guideline | 2015-12-15 → 2015-12-08 (-7d) | 2015-12-15 → 2015-12-08 (-7d) |

| ID | Task | Start | Finish |
| --- | --- | --- | --- |
| 154 | Create Project Result Assessment | 2015-12-15 → 2015-12-08 (-7d) | 2015-12-15 → 2015-12-08 (-7d) |
| 155 | Create Slides for Final Presentation | 2015-12-16 → 2015-12-09 (-7d) | 2015-12-16 → 2015-12-09 (-7d) |
| 156 | Submit all Final Documents and Source codes | 2015-12-16 → 2015-12-09 (-7d) | 2015-12-16 → 2015-12-09 (-7d) |
| 157 | **Pre-closing** | 2015-12-17 → 2015-12-10 (-7d) | 2015-12-17 → 2015-12-10 (-7d) |
| 158 | Trainning presentation | 2015-12-17 → 2015-12-10 (-7d) | 2015-12-17 → 2015-12-10 (-7d) |
| 159 | **Closing** | 2015-12-18 → 2015-12-11 (-7d) | 2015-12-18 → 2015-12-11 (-7d) |
| 160 | Presentation for Capstone Project | 2015-12-18 → 2015-12-11 (-7d) | 2015-12-18 → 2015-12-11 (-7d) |
| 161 | Complete Project | 2015-12-18 → 2015-12-11 (-7d) | 2015-12-18 → 2015-12-11 (-7d) |

## Version 4 (saved 2015-09-17)

Note of the change: Merge branch 'master' of https://github.com/sangnvus/2015FALLJS01

Last finish stays 2015-12-11.

Added:

| ID | Task | Duration | Start | Finish | Predecessors | Resources |
| --- | --- | --- | --- | --- | --- | --- |
| 52 | **Demo & Prototypes** | 1d? | 2015-09-21 | 2015-09-21 | 9 |  |
| 70 | Update Architectural Design | 1d? | 2015-09-25 | 2015-09-28 | 69 | ManhLN |
| 77 | Update screen design | 1d? | 2015-10-02 | 2015-10-05 | 76 | DesignTeam |
| 78 | Complete screen design | 0d | 2015-10-05 | 2015-10-05 | 77 |  |
| 82 | Update database design | 0.5d? | 2015-09-28 | 2015-09-28 | 81 | TrungVN |
| 88 | Update Class/component design | 1d? | 2015-10-05 | 2015-10-06 | 87 | DevTeam |
| 89 | Complete Class/component design | 0d | 2015-10-06 | 2015-10-06 | 88 |  |

Removed: 22 Demo & Prototypes (not complete)

Changed:

| ID | Task | Start | Finish | Duration | Total float | Predecessors | Other |
| --- | --- | --- | --- | --- | --- | --- | --- |
| 18 | **Technology Research (Part 1)** |  | 2015-09-14 → 2015-09-18 (+4d) | 1d → 5d | 4d → 0d |  | was named Technology Research (not complete) |
| 19 | Study .net MVC 5 |  | 2015-09-14 → 2015-09-18 (+4d) | 1d → 5d | 4d → 0d |  |  |
| 20 | Study AngularJS |  | 2015-09-14 → 2015-09-18 (+4d) | 1d → 5d | 4d → 0d |  |  |
| 21 | Study Bootstraps, HTML5 & CSS3 |  | 2015-09-14 → 2015-09-18 (+4d) | 1d → 5d | 4d → 0d |  |  |
| 25 | Review Project Introduction |  |  |  |  |  | resources TrungCV → TrungVN; MaiCTP |
| 36 | Create User Requirement Sepecification |  |  |  |  |  | resources ChinhVC → ChinhVC; AnhDD |
| 37 | Review User Requirement Specification |  |  |  |  |  | resources AnhDD → HuyNM |
| 41 | Create Q&A sheet |  |  |  |  |  | resources TrungCV → TrungVN |
| 47 | **Technology Research (Part 2)** |  | 2015-09-21 → 2015-09-22 (+1d) | 1d? → 2d? | 23.5d → 22.5d |  | was named Technology Research (Continue) |
| 48 | Code first migration |  | 2015-09-21 → 2015-09-22 (+1d) | 1d → 2d | 23.5d → 22.5d |  |  |
| 49 | Restful API on .net MVC |  | 2015-09-21 → 2015-09-22 (+1d) | 1d → 2d | 23.5d → 22.5d |  | resources ManhLN → HuyNM |
| 50 | Payment by BaoKim API |  |  |  | 23.5d → 22.5d |  | resources HuyNM → TrungVN |
| 51 | Facebook Login API | 2015-09-21 → 2015-09-22 (+1d) | 2015-09-21 → 2015-09-22 (+1d) |  | 23.5d → 22.5d | none → 50 | resources TrungCV → TrungVN |
| 53 | Create Demo | 2015-09-07 → 2015-09-21 (+14d) | 2015-09-08 → 2015-09-21 (+13d) | 2d → 1d | 8d → 23.5d |  |  |
| 54 | Create Prototype | 2015-09-07 → 2015-09-21 (+14d) | 2015-09-07 → 2015-09-21 (+14d) |  | 9d → 23.5d |  |  |
| 63 | **System Design** | 2015-09-23 → 2015-09-21 (-2d) |  | 9d? → 11.5d? |  | 55 → none |  |
| 64 | Create design review checklist | 2015-09-23 → 2015-09-21 (-2d) | 2015-09-24 → 2015-09-21 (-3d) |  |  |  |  |
| 65 | **Architectural Design** | 2015-09-24 → 2015-09-22 (-2d) | 2015-09-29 → 2015-09-28 (-1d) | 3d? → 4.5d? |  |  |  |
| 66 | Define architectural design | 2015-09-24 → 2015-09-22 (-2d) | 2015-09-25 → 2015-09-23 (-2d) | 1d → 2d |  |  |  |
| 67 | Define system features | 2015-09-25 → 2015-09-22 (-3d) | 2015-09-28 → 2015-09-23 (-5d) | 1d? → 2d |  | 66 → none | resources ChinhVC → HuyNM |
| 68 | Study and choose suitable architectural design | 2015-09-28 → 2015-09-24 (-4d) | 2015-09-28 → 2015-09-24 (-4d) | 0.5d? → 1d |  | 67 → 67, 66 |  |
| 69 | Review architectural design | 2015-09-29 → 2015-09-25 (-4d) | 2015-09-29 → 2015-09-25 (-4d) |  |  |  | resources HuyNM → TEAM |
| 71 | Complete Architectural Design version 1.0 | 2015-09-29 → 2015-09-25 (-4d) | 2015-09-29 → 2015-09-25 (-4d) |  | 0d → 1d |  |  |
| 72 | **Screen design** | 2015-09-24 → 2015-09-23 (-1d) | 2015-09-30 → 2015-10-05 (+5d) | 4d? → 8d? | 17d → 14d | 64 → 55 |  |
| 73 | Create screen flow document | 2015-09-24 → 2015-09-23 (-1d) | 2015-09-25 → 2015-09-24 (-1d) |  | 17d → 14d |  | was named Create Screen Flow document; resources ChinhVC → DesignTeam |
| 74 | Create client screen design | 2015-09-25 → 2015-09-24 (-1d) | 2015-09-28 → 2015-10-01 (+3d) | 1d? → 5d | 17d → 14d |  |  |
| 75 | Create admin screen design | 2015-09-28 → 2015-09-24 (-4d) | 2015-09-29 → 2015-10-01 (+2d) | 1d? → 5d | 17d → 14d | 74 → 73 |  |
| 76 | Review screen design | 2015-09-29 → 2015-10-01 (+2d) | 2015-09-30 → 2015-10-02 (+2d) |  | 17d → 14d | 75 → 75, 74 |  |
| 79 | **Database design** | 2015-09-24 → 2015-09-23 (-1d) | 2015-09-29 → 2015-09-28 (-1d) |  | 0d → 19d | 64 → 55 |  |
| 80 | Create database design | 2015-09-24 → 2015-09-23 (-1d) | 2015-09-28 → 2015-09-25 (-3d) |  | 0d → 19d |  | resources TrungCV → TrungVN |
| 81 | Review database design | 2015-09-28 → 2015-09-25 (-3d) | 2015-09-29 → 2015-09-25 (-4d) | 1d? → 0.5d? | 0d → 19d |  |  |
| 83 | Complete database design | 2015-09-29 → 2015-09-28 (-1d) | 2015-09-29 → 2015-09-28 (-1d) |  | 0d → 19d | 81 → 82 |  |
| 84 | **Class/Component Design** | 2015-09-29 → 2015-09-28 (-1d) |  | 5d? → 6d? |  | 65, 79 → 65, 55 |  |
| 85 | Define Class and Component | 2015-09-29 → 2015-09-28 (-1d) | 2015-09-30 → 2015-09-29 (-1d) |  |  |  |  |
| 86 | Create Class/component design | 2015-09-30 → 2015-09-29 (-1d) | 2015-10-05 → 2015-10-02 (-3d) |  |  |  | resources TrungCV → DevTeam |
| 87 | Review Class/component design | 2015-10-05 → 2015-10-02 (-3d) | 2015-10-06 → 2015-10-05 (-1d) |  |  |  | was named Review class/component design |
| 119 | User Personal Page Module |  |  |  |  |  | resources TrungCV → TrungVN |
| 121 | Message Module |  |  |  |  |  | resources TrungCV → TrungVN |
| 124 | Manage Users Module |  |  |  |  |  | resources TrungCV → TrungVN |
| 127 | Manage Categories Module |  |  |  |  |  | resources TrungCV → TrungVN |

## Version 5 (saved 2015-09-18)

Note of the change: update checklist update project plan + project schedule

Last finish 2015-12-11 → 2015-12-28 (+17d).

Added:

| ID | Task | Duration | Start | Finish | Predecessors | Resources |
| --- | --- | --- | --- | --- | --- | --- |
| 69 | Create Architectural design | 3d | 2015-10-02 | 2015-10-06 | 68 | ManhLN |
| 97 | Update test plan | 1d? | 2015-10-29 | 2015-10-29 | 96 | TestTEAM |
| 98 | Test plan complete | 0d | 2015-10-29 | 2015-10-29 | 97 |  |
| 133 | Update system test case | 1d? | 2015-11-09 | 2015-11-09 | 132 | TestTEAM |
| 137 | Update integration test case | 1d? | 2015-11-16 | 2015-11-16 | 136 | TestTEAM |
| 138 | Writing test case complete | 0d | 2015-11-16 | 2015-11-16 | 134 |  |
| 155 | Testing Complete | 0d | 2015-12-10 | 2015-12-10 | 154 |  |
| 159 | Update Quality Report | 0.5d | 2015-12-15 | 2015-12-15 | 158 | MaiCTP |
| 163 | Create lesson learned | 1d | 2015-12-17 | 2015-12-17 |  | TEAM |

Removed: 96 Test cases

Changed:

| ID | Task | Start | Finish | Duration | Total float | Predecessors | Other |
| --- | --- | --- | --- | --- | --- | --- | --- |
| 1 | **Dandelion (DDL)** |  | 2015-12-11 → 2015-12-28 (+17d) | 70d? → 81d? |  |  |  |
| 2 | **Initiation** |  | 2015-09-18 → 2015-09-22 (+4d) | 10d? → 12d? |  |  |  |
| 18 | **Technology Research (Part 1)** |  | 2015-09-18 → 2015-09-22 (+4d) | 5d → 7d |  |  |  |
| 19 | Study .net MVC 5 |  | 2015-09-18 → 2015-09-22 (+4d) | 5d → 7d |  |  |  |
| 20 | Study AngularJS |  | 2015-09-18 → 2015-09-22 (+4d) | 5d → 7d |  |  |  |
| 28 | **Project Plan** |  | 2015-09-18 → 2015-09-22 (+4d) | 6d? → 8d? |  |  |  |
| 29 | Create Project Plan in MS Word |  | 2015-09-11 → 2015-09-15 (+4d) | 1.5d → 3d |  |  |  |
| 30 | Create Project Schedule in .mmp file | 2015-09-14 → 2015-09-15 (+1d) | 2015-09-16 → 2015-09-18 (+2d) |  |  |  |  |
| 32 | Review Project Plan, CMPlan, Schedule | 2015-09-17 → 2015-09-18 (+1d) | 2015-09-17 → 2015-09-21 (+4d) | 0.5d → 1d |  |  |  |
| 33 | Update Project Plan, CMPlan, Schedule | 2015-09-17 → 2015-09-21 (+4d) | 2015-09-18 → 2015-09-22 (+4d) |  |  |  |  |
| 34 | Complete Project Plan | 2015-09-17 → 2015-09-21 (+4d) | 2015-09-17 → 2015-09-21 (+4d) |  |  |  |  |
| 44 | Create progress report 1 | 2015-09-18 → 2015-09-22 (+4d) | 2015-09-18 → 2015-09-22 (+4d) |  |  |  |  |
| 45 | Submit progress report 1 | 2015-09-18 → 2015-09-22 (+4d) | 2015-09-18 → 2015-09-22 (+4d) |  |  |  |  |
| 46 | **Solution** | 2015-09-21 → 2015-09-23 (+2d) | 2015-10-23 → 2015-10-30 (+7d) | 24.5d? → 28d? |  |  |  |
| 47 | **Technology Research (Part 2)** | 2015-09-21 → 2015-09-23 (+2d) | 2015-09-22 → 2015-09-25 (+3d) | 2d? → 3d? | 22.5d → 0d |  |  |
| 48 | Code first migration | 2015-09-21 → 2015-09-23 (+2d) | 2015-09-22 → 2015-09-24 (+2d) |  | 22.5d → 2d |  |  |
| 49 | Restful API on .net MVC | 2015-09-21 → 2015-09-23 (+2d) | 2015-09-22 → 2015-09-25 (+3d) | 2d → 3d | 22.5d → 0d |  |  |
| 50 | Payment by BaoKim API | 2015-09-21 → 2015-09-23 (+2d) | 2015-09-21 → 2015-09-23 (+2d) |  | 22.5d → 0d |  |  |
| 51 | Facebook Login API | 2015-09-22 → 2015-09-24 (+2d) | 2015-09-22 → 2015-09-24 (+2d) |  | 22.5d → 0d |  |  |
| 52 | **Demo & Prototypes** | 2015-09-21 → 2015-09-23 (+2d) | 2015-09-21 → 2015-10-05 (+14d) | 1d? → 9d | 23.5d → 19d | 9 → none |  |
| 53 | Create Demo | 2015-09-21 → 2015-09-23 (+2d) | 2015-09-21 → 2015-10-01 (+10d) | 1d → 7d | 23.5d → 21d |  |  |
| 54 | Create Prototype | 2015-09-21 → 2015-09-23 (+2d) | 2015-09-21 → 2015-10-05 (+14d) | 1d? → 9d | 23.5d → 19d |  |  |
| 55 | **Software Requirement Specification** | 2015-09-21 → 2015-09-23 (+2d) | 2015-09-23 → 2015-09-28 (+5d) | 2.5d? → 4d | 3d → 8d |  |  |
| 56 | **Non-functional Requirements Specification** | 2015-09-21 → 2015-09-23 (+2d) | 2015-09-22 → 2015-09-24 (+2d) | 1.5d? → 2d | 3d → 8d |  |  |
| 57 | Define Security Requirements | 2015-09-21 → 2015-09-23 (+2d) | 2015-09-21 → 2015-09-23 (+2d) | 0.5d? → 1d | 3d → 9d |  | resources ManhLN → MaiCTP |
| 58 | Define Performane Requirements | 2015-09-21 → 2015-09-23 (+2d) | 2015-09-21 → 2015-09-23 (+2d) | 0.5d? → 1d | 3d → 9d | 57 → none | resources HuyNM → AnhDD |
| 59 | Define User-interface Requirements | 2015-09-22 → 2015-09-23 (+1d) | 2015-09-22 → 2015-09-24 (+2d) | 0.5d? → 2d | 3d → 8d | 58 → none |  |
| 60 | **Functional Requirements Specification** | 2015-09-22 → 2015-09-25 (+3d) | 2015-09-23 → 2015-09-28 (+5d) | 1d? → 2d | 3d → 8d |  |  |
| 61 | Define User Client Module functional Requirements | 2015-09-22 → 2015-09-25 (+3d) | 2015-09-22 → 2015-09-28 (+6d) | 0.5d? → 2d | 3d → 8d |  |  |
| 62 | Define Admin Module functional Requirments | 2015-09-23 → 2015-09-25 (+2d) | 2015-09-23 → 2015-09-28 (+5d) | 0.5d? → 2d | 3d → 8d | 61 → none | resources HuyNM → AnhDD |
| 63 | **System Design** | 2015-09-21 → 2015-09-25 (+4d) | 2015-10-06 → 2015-10-20 (+14d) | 11.5d? → 18d? |  |  |  |
| 64 | Create design review checklist | 2015-09-21 → 2015-09-25 (+4d) | 2015-09-21 → 2015-09-25 (+4d) |  |  | none → 51 | resources ChinhVC → TrungVN |
| 65 | **Architectural Design** | 2015-09-22 → 2015-09-28 (+6d) | 2015-09-28 → 2015-10-08 (+10d) | 4.5d? → 9d? |  |  |  |
| 66 | Define architectural design | 2015-09-22 → 2015-09-28 (+6d) | 2015-09-23 → 2015-09-28 (+5d) | 2d → 1d | 0d → 1d | none → 48 |  |
| 67 | Define system features | 2015-09-22 → 2015-09-28 (+6d) | 2015-09-23 → 2015-09-29 (+6d) |  |  | none → 49 |  |
| 68 | Study and choose suitable architectural design | 2015-09-24 → 2015-09-30 (+6d) | 2015-09-24 → 2015-10-01 (+7d) | 1d → 2d |  |  |  |
| 70 | Review architectural design | 2015-09-25 → 2015-10-07 (+12d) | 2015-09-25 → 2015-10-07 (+12d) | 0.5d? → 1d |  | 68 → 69 |  |
| 71 | Update Architectural Design | 2015-09-25 → 2015-10-08 (+13d) | 2015-09-28 → 2015-10-08 (+10d) |  |  |  |  |
| 72 | Complete Architectural Design version 1.0 | 2015-09-25 → 2015-10-07 (+12d) | 2015-09-25 → 2015-10-07 (+12d) |  |  |  |  |
| 73 | **Screen design** | 2015-09-23 → 2015-09-29 (+6d) | 2015-10-05 → 2015-10-09 (+4d) | 8d? → 9d? | 14d → 15d |  |  |
| 74 | Create screen flow document | 2015-09-23 → 2015-09-29 (+6d) | 2015-09-24 → 2015-09-30 (+6d) | 1d? → 2d | 14d → 15d |  |  |
| 75 | Create client screen design | 2015-09-24 → 2015-10-01 (+7d) | 2015-10-01 → 2015-10-07 (+6d) |  | 14d → 15d |  |  |
| 76 | Create admin screen design | 2015-09-24 → 2015-10-01 (+7d) | 2015-10-01 → 2015-10-07 (+6d) |  | 14d → 15d |  |  |
| 77 | Review screen design | 2015-10-01 → 2015-10-08 (+7d) | 2015-10-02 → 2015-10-08 (+6d) |  | 14d → 15d |  |  |
| 78 | Update screen design | 2015-10-02 → 2015-10-09 (+7d) | 2015-10-05 → 2015-10-09 (+4d) |  | 14d → 15d |  |  |
| 79 | Complete screen design | 2015-10-05 → 2015-10-09 (+4d) | 2015-10-05 → 2015-10-09 (+4d) |  | 14d → 15d |  |  |
| 80 | **Database design** | 2015-09-23 → 2015-09-29 (+6d) | 2015-09-28 → 2015-10-05 (+7d) | 3d? → 4.5d? | 19d → 19.5d |  |  |
| 81 | Create database design | 2015-09-23 → 2015-09-29 (+6d) | 2015-09-25 → 2015-10-01 (+6d) | 2d → 3d | 19d → 19.5d |  |  |
| 82 | Review database design | 2015-09-25 → 2015-10-02 (+7d) | 2015-09-25 → 2015-10-02 (+7d) |  | 19d → 19.5d |  | resources ManhLN → TEAM |
| 83 | Update database design | 2015-09-28 → 2015-10-02 (+4d) | 2015-09-28 → 2015-10-05 (+7d) | 0.5d? → 1d | 19d → 19.5d |  |  |
| 84 | Complete database design | 2015-09-28 → 2015-10-05 (+7d) | 2015-09-28 → 2015-10-05 (+7d) |  | 19d → 19.5d |  |  |
| 85 | **Class/Component Design** | 2015-09-28 → 2015-10-09 (+11d) | 2015-10-06 → 2015-10-20 (+14d) | 6d? → 8d? |  |  |  |
| 86 | Define Class and Component | 2015-09-28 → 2015-10-09 (+11d) | 2015-09-29 → 2015-10-12 (+13d) | 1d → 2d |  |  |  |
| 87 | Create Class/component design | 2015-09-29 → 2015-10-13 (+14d) | 2015-10-02 → 2015-10-16 (+14d) | 3d → 4d |  |  |  |
| 88 | Review Class/component design | 2015-10-02 → 2015-10-19 (+17d) | 2015-10-05 → 2015-10-19 (+14d) |  |  |  |  |
| 89 | Update Class/component design | 2015-10-05 → 2015-10-20 (+15d) | 2015-10-06 → 2015-10-20 (+14d) |  |  |  |  |
| 90 | Complete Class/component design | 2015-10-06 → 2015-10-20 (+14d) | 2015-10-06 → 2015-10-20 (+14d) |  |  |  |  |
| 91 | Create progress report 2 | 2015-10-06 → 2015-10-21 (+15d) | 2015-10-08 → 2015-10-21 (+13d) | 2d → 1d |  |  |  |
| 92 | Submit progress report 2 | 2015-10-08 → 2015-10-21 (+13d) | 2015-10-08 → 2015-10-21 (+13d) |  |  |  |  |
| 93 | **Testing** | 2015-10-08 → 2015-10-22 (+14d) | 2015-10-22 → 2015-10-29 (+7d) | 10d? → 6d? |  |  |  |
| 94 | Create test plan/case checklists | 2015-10-08 → 2015-10-22 (+14d) | 2015-10-09 → 2015-10-22 (+13d) | 1d? → 1d |  |  |  |
| 95 | Create test plan | 2015-10-09 → 2015-10-23 (+14d) | 2015-10-13 → 2015-10-27 (+14d) | 2d → 3d |  |  |  |
| 96 | Review test plan | 2015-10-13 → 2015-10-28 (+15d) | 2015-10-14 → 2015-10-28 (+14d) | 1d? → 1d |  |  |  |
| 99 | Create progress report 3 | 2015-10-22 → 2015-10-30 (+8d) | 2015-10-23 → 2015-10-30 (+7d) |  |  |  |  |
| 100 | Submit progress report 3 | 2015-10-23 → 2015-10-30 (+7d) | 2015-10-23 → 2015-10-30 (+7d) |  |  |  |  |
| 101 | **Construction** | 2015-10-23 → 2015-11-02 (+10d) | 2015-12-03 → 2015-12-16 (+13d) | 29.5d? → 33d? |  |  |  |
| 102 | **Define Coding Standards** | 2015-10-23 → 2015-11-02 (+10d) | 2015-10-26 → 2015-11-02 (+7d) |  |  |  |  |
| 103 | Create Coding Convention | 2015-10-23 → 2015-11-02 (+10d) | 2015-10-26 → 2015-11-02 (+7d) |  | 0d → 7d |  |  |
| 104 | Create Code & UT Test review checklist | 2015-10-23 → 2015-11-02 (+10d) | 2015-10-26 → 2015-11-02 (+7d) |  |  |  |  |
| 105 | **Screen Design** | 2015-10-26 → 2015-11-02 (+7d) | 2015-10-27 → 2015-11-03 (+7d) | 1d? → 2d | 0d → 9d | 102 → none |  |

| ID | Task | Start | Finish | Duration | Total float | Predecessors | Other |
| --- | --- | --- | --- | --- | --- | --- | --- |
| 106 | Refine screen design document and prototype | 2015-10-26 → 2015-11-02 (+7d) | 2015-10-27 → 2015-11-03 (+7d) | 1d? → 2d | 0d → 9d |  | was named Refine screen design document; resources ChinhVC → TEAM |
| 107 | **Coding & Unit test** | 2015-10-26 → 2015-11-03 (+8d) | 2015-11-25 → 2015-12-01 (+6d) | 22d? → 21d | 5d → 7d | 102 → none |  |
| 108 | Structure core modules & source code common | 2015-10-26 → 2015-11-03 (+8d) | 2015-10-28 → 2015-11-05 (+8d) | 2d → 3d | 5d → 7d | none → 103 | resources none → DevTeam |
| 109 | **Client User Module** | 2015-10-28 → 2015-11-06 (+9d) | 2015-11-13 → 2015-11-23 (+10d) | 12d? → 12d | 5d → 7d | 108, 105 → 108, 105, 102 |  |
| 110 | Home Page Module | 2015-10-28 → 2015-11-06 (+9d) | 2015-10-30 → 2015-11-10 (+11d) | 2d → 3d | 5d → 12d |  |  |
| 111 | Login/ Logout Module | 2015-10-30 → 2015-11-11 (+12d) | 2015-11-02 → 2015-11-12 (+10d) | 1d? → 2d | 5d → 12d |  |  |
| 112 | **Project module** | 2015-11-02 → 2015-11-06 (+4d) | 2015-11-06 → 2015-11-18 (+12d) | 4d → 9d | 5d → 7d | 111 → none |  |
| 113 | Create/manage a project Module | 2015-11-02 → 2015-11-06 (+4d) | 2015-11-04 → 2015-11-12 (+8d) | 2d → 5d | 5d → 7d |  |  |
| 114 | View/Back a project Module | 2015-11-04 → 2015-11-13 (+9d) | 2015-11-06 → 2015-11-18 (+12d) | 2d → 4d | 5d → 7d |  |  |
| 115 | User Personal Page Module |  | 2015-11-11 → 2015-11-10 (-1d) |  | 5d → 10d | 112 → none |  |
| 116 | Search Module | 2015-11-11 → 2015-11-19 (+8d) | 2015-11-12 → 2015-11-23 (+11d) | 1d? → 3d | 5d → 7d | 115 → 112 | resources ChinhVC → HuyNM |
| 117 | Message Module | 2015-11-12 → 2015-11-11 (-1d) | 2015-11-13 → 2015-11-16 (+3d) | 1d → 4d | 5d → 10d | 116 → 115 |  |
| 118 | **Admin Module** |  | 2015-11-25 → 2015-12-01 (+6d) | 8d? → 13d | 5d → 7d | 109 → 108, 105, 102 |  |
| 119 | Login/ Logout module |  |  | 1d? → 2d | 5d → 12d | none → 111 |  |
| 120 | Manage Users Module | 2015-11-16 → 2015-11-17 (+1d) | 2015-11-18 → 2015-11-23 (+5d) | 2d → 5d | 5d → 10d | 119 → 117 |  |
| 121 | Manage Projects Module | 2015-11-18 → 2015-11-24 (+6d) | 2015-11-20 → 2015-12-01 (+11d) | 2d → 6d | 5d → 7d | 120 → 116 |  |
| 122 | Manage Backings Module | 2015-11-20 → 2015-11-17 (-3d) | 2015-11-23 → 2015-11-19 (-4d) | 1d? → 3d | 5d → 12d | 121 → 119 | resources ChinhVC → ManhLN |
| 123 | Manage Categories Module | 2015-11-23 → 2015-11-20 (-3d) |  | 1d? → 3d | 5d → 12d |  | resources TrungVN → ManhLN |
| 124 | Mangage Silder Module |  | 2015-11-25 → 2015-11-26 (+1d) | 1d? → 3d | 5d → 10d | 123 → 120 | resources HuyNM → TrungVN |
| 125 | Complete Coding | 2015-11-25 → 2015-12-01 (+6d) | 2015-11-25 → 2015-12-01 (+6d) |  | 5d → 7d |  |  |
| 126 | Create Progress Report 4 | 2015-11-25 → 2015-12-02 (+7d) | 2015-11-26 → 2015-12-02 (+6d) |  | 5.5d → 10d |  |  |
| 127 | Submit Progress Report 4 | 2015-11-26 → 2015-12-02 (+6d) | 2015-11-26 → 2015-12-02 (+6d) |  | 5.5d → 10d |  |  |
| 128 | **Testing** | 2015-10-27 → 2015-11-03 (+7d) | 2015-12-02 → 2015-12-10 (+8d) | 26d? → 28d? |  |  |  |
| 129 | **Writing test case (continue)** | 2015-10-27 → 2015-11-03 (+7d) | 2015-10-28 → 2015-11-16 (+19d) | 1d? → 10d? |  | 105 → 104 | was named Update Test Case |
| 130 | **System test case** | 2015-10-19 → 2015-11-03 (+15d) | 2015-10-22 → 2015-11-09 (+18d) | 3d? → 5d? |  | 134 → none |  |
| 131 | Create system test case | 2015-10-19 → 2015-11-03 (+15d) | 2015-10-21 → 2015-11-05 (+15d) | 2d → 3d |  |  | resources ChinhVC → TestTEAM |
| 132 | Review system test case | 2015-10-21 → 2015-11-06 (+16d) | 2015-10-22 → 2015-11-06 (+15d) |  |  |  |  |
| 134 | **Integration test case** | 2015-10-14 → 2015-11-10 (+27d) | 2015-10-19 → 2015-11-16 (+28d) | 3d? → 5d? |  | none → 130 |  |
| 135 | Create integration test case | 2015-10-14 → 2015-11-10 (+27d) | 2015-10-16 → 2015-11-12 (+27d) | 2d → 3d |  |  | resources AnhDD → TestTEAM |
| 136 | Review integration test case | 2015-10-16 → 2015-11-13 (+28d) | 2015-10-19 → 2015-11-13 (+25d) |  |  |  |  |
| 139 | **Execute Test Round 1** | 2015-10-28 → 2015-11-17 (+20d) | 2015-11-13 → 2015-11-26 (+13d) | 12d → 8d |  |  |  |
| 140 | Execute Component Test | 2015-10-28 → 2015-11-17 (+20d) | 2015-10-30 → 2015-11-18 (+19d) |  |  |  |  |
| 141 | Fix bug Component Test | 2015-10-30 → 2015-11-19 (+20d) | 2015-11-03 → 2015-11-20 (+17d) |  | 0d → 4d |  |  |
| 142 | Execute Integration Test | 2015-11-03 → 2015-11-19 (+16d) | 2015-11-05 → 2015-11-20 (+15d) |  |  | 141 → 140 |  |
| 143 | Fix bug Integration Test | 2015-11-05 → 2015-11-23 (+18d) | 2015-11-09 → 2015-11-24 (+15d) |  | 0d → 2d |  |  |
| 144 | Execute System Test | 2015-11-09 → 2015-11-23 (+14d) | 2015-11-11 → 2015-11-24 (+13d) |  |  | 143 → 142 |  |
| 145 | Fix bug System Test | 2015-11-11 → 2015-11-25 (+14d) | 2015-11-13 → 2015-11-26 (+13d) |  |  |  |  |
| 146 | Update Test Case | 2015-11-13 → 2015-11-27 (+14d) | 2015-11-16 → 2015-11-27 (+11d) |  |  |  | resources MaiCTP → TestTEAM |
| 147 | **Execute Test Round 2** | 2015-11-16 → 2015-11-30 (+14d) | 2015-12-01 → 2015-12-09 (+8d) | 11d → 8d |  |  |  |
| 148 | Execute Component Test | 2015-11-16 → 2015-11-30 (+14d) | 2015-11-18 → 2015-12-01 (+13d) |  |  |  |  |
| 149 | Fix bug Component Test | 2015-11-18 → 2015-12-02 (+14d) | 2015-11-20 → 2015-12-03 (+13d) |  | 0d → 4d |  |  |
| 150 | Execute Integration Test | 2015-11-20 → 2015-12-02 (+12d) | 2015-11-24 → 2015-12-03 (+9d) |  |  | 149 → 148 |  |
| 151 | Fix bug Integration Test | 2015-11-24 → 2015-12-04 (+10d) | 2015-11-26 → 2015-12-07 (+11d) |  | 0d → 2d |  |  |
| 152 | Execute System Test | 2015-11-26 → 2015-12-04 (+8d) | 2015-11-27 → 2015-12-07 (+10d) | 1d → 2d |  | 151 → 150 |  |
| 153 | Fix bug System Test | 2015-11-27 → 2015-12-08 (+11d) | 2015-12-01 → 2015-12-09 (+8d) |  |  |  |  |
| 154 | Create Test Report | 2015-12-01 → 2015-12-10 (+9d) | 2015-12-02 → 2015-12-10 (+8d) |  |  |  |  |
| 156 | **Quality Control** | 2015-12-02 → 2015-12-11 (+9d) | 2015-12-02 → 2015-12-15 (+13d) | 0.5d? → 3d |  |  |  |
| 157 | Create Quality Report | 2015-12-02 → 2015-12-11 (+9d) | 2015-12-02 → 2015-12-14 (+12d) | 0.5d? → 2d |  |  |  |
| 158 | Review Quality Report | 2015-12-02 → 2015-12-15 (+13d) | 2015-12-02 → 2015-12-15 (+13d) | 0.5d? → 0.5d |  | none → 157 |  |
| 160 | Create Progress Report 5 | 2015-12-03 → 2015-12-16 (+13d) | 2015-12-03 → 2015-12-16 (+13d) |  |  |  |  |
| 161 | Submit Progress Report 5 | 2015-12-03 → 2015-12-16 (+13d) | 2015-12-03 → 2015-12-16 (+13d) |  |  |  |  |
| 162 | **Termination** | 2015-12-04 → 2015-12-17 (+13d) | 2015-12-11 → 2015-12-28 (+17d) | 6d? → 8d? |  |  |  |
| 164 | **Final Report Document** | 2015-12-04 → 2015-12-18 (+14d) | 2015-12-09 → 2015-12-22 (+13d) | 4d? → 3d |  | none → 163 |  |
| 165 | Create Final Report document | 2015-12-04 → 2015-12-18 (+14d) | 2015-12-04 → 2015-12-22 (+18d) | 1d? → 3d |  |  | resources TEAM → ManhLN |
| 166 | Create Installing Guide | 2015-12-07 → 2015-12-18 (+11d) | 2015-12-07 → 2015-12-22 (+15d) | 1d → 3d |  | 165 → none | resources HuyNM → HuyNM; TrungVN |
| 167 | Create User Guideline | 2015-12-08 → 2015-12-18 (+10d) | 2015-12-08 → 2015-12-22 (+14d) | 0.5d? → 3d |  | 166 → none | resources ChinhVC → ChinhVC; AnhDD |
| 168 | Create Project Result Assessment | 2015-12-08 → 2015-12-18 (+10d) | 2015-12-08 → 2015-12-21 (+13d) | 0.5d? → 2d | 0d → 1d | 167 → none |  |
| 169 | Create Slides for Final Presentation | 2015-12-09 → 2015-12-18 (+9d) | 2015-12-09 → 2015-12-22 (+13d) | 1d → 3d |  | 168 → none |  |
| 170 | Submit all Final Documents and Source codes | 2015-12-09 → 2015-12-22 (+13d) | 2015-12-09 → 2015-12-22 (+13d) |  | 0d → 4d | 169 → 164 |  |
| 171 | **Pre-closing** | 2015-12-10 → 2015-12-23 (+13d) | 2015-12-10 → 2015-12-25 (+15d) | 1d? → 3d |  |  |  |
| 172 | Trainning presentation | 2015-12-10 → 2015-12-23 (+13d) | 2015-12-10 → 2015-12-25 (+15d) | 1d? → 3d |  |  |  |
| 173 | **Closing** | 2015-12-11 → 2015-12-28 (+17d) | 2015-12-11 → 2015-12-28 (+17d) |  |  |  |  |
| 174 | Presentation for Capstone Project | 2015-12-11 → 2015-12-28 (+17d) | 2015-12-11 → 2015-12-28 (+17d) |  |  |  |  |
| 175 | Complete Project | 2015-12-11 → 2015-12-28 (+17d) | 2015-12-11 → 2015-12-28 (+17d) |  |  |  |  |

## Version 6 (saved 2015-09-18)

Note of the change: Merge branch 'master' of https://github.com/sangnvus/2015FALLJS01

Last finish 2015-12-28 → 2015-12-25 (-3d).

Changed:

| ID | Task | Start | Finish | Duration | Total float | Predecessors |
| --- | --- | --- | --- | --- | --- | --- |
| 1 | **Dandelion (DDL)** |  | 2015-12-28 → 2015-12-25 (-3d) | 81d? → 80d? |  |  |
| 101 | **Construction** |  | 2015-12-16 → 2015-12-14 (-2d) | 33d? → 31d? |  |  |
| 107 | **Coding & Unit test** |  | 2015-12-01 → 2015-11-30 (-1d) | 21d → 20d | 7d → 6d |  |
| 109 | **Client User Module** |  | 2015-11-23 → 2015-11-20 (-3d) | 12d → 11d | 7d → 6d |  |
| 116 | Search Module |  | 2015-11-23 → 2015-11-20 (-3d) | 3d → 2d | 7d → 6d |  |
| 118 | **Admin Module** |  | 2015-12-01 → 2015-11-30 (-1d) | 13d → 12d | 7d → 6d |  |
| 121 | Manage Projects Module | 2015-11-24 → 2015-11-23 (-1d) | 2015-12-01 → 2015-11-30 (-1d) |  | 7d → 6d |  |
| 125 | Complete Coding | 2015-12-01 → 2015-11-30 (-1d) | 2015-12-01 → 2015-11-30 (-1d) |  | 7d → 6d |  |
| 126 | Create Progress Report 4 | 2015-12-02 → 2015-12-01 (-1d) | 2015-12-02 → 2015-12-01 (-1d) |  | 10d → 9d |  |
| 127 | Submit Progress Report 4 | 2015-12-02 → 2015-12-01 (-1d) | 2015-12-02 → 2015-12-01 (-1d) |  | 10d → 9d |  |
| 128 | **Testing** |  | 2015-12-10 → 2015-12-08 (-2d) | 28d? → 26d? |  |  |
| 146 | Update Test Case | 2015-11-27 → 2015-11-25 (-2d) | 2015-11-27 → 2015-11-25 (-2d) |  |  | 139 → 144 |
| 147 | **Execute Test Round 2** | 2015-11-30 → 2015-11-26 (-4d) | 2015-12-09 → 2015-12-07 (-2d) |  |  |  |
| 148 | Execute Component Test | 2015-11-30 → 2015-11-26 (-4d) | 2015-12-01 → 2015-11-27 (-4d) |  |  |  |
| 149 | Fix bug Component Test | 2015-12-02 → 2015-11-30 (-2d) | 2015-12-03 → 2015-12-01 (-2d) |  |  |  |
| 150 | Execute Integration Test | 2015-12-02 → 2015-11-30 (-2d) | 2015-12-03 → 2015-12-01 (-2d) |  |  |  |
| 151 | Fix bug Integration Test | 2015-12-04 → 2015-12-02 (-2d) | 2015-12-07 → 2015-12-03 (-4d) |  |  |  |
| 152 | Execute System Test | 2015-12-04 → 2015-12-02 (-2d) | 2015-12-07 → 2015-12-03 (-4d) |  |  |  |
| 153 | Fix bug System Test | 2015-12-08 → 2015-12-04 (-4d) | 2015-12-09 → 2015-12-07 (-2d) |  |  |  |
| 154 | Create Test Report | 2015-12-10 → 2015-12-08 (-2d) | 2015-12-10 → 2015-12-08 (-2d) |  |  |  |
| 155 | Testing Complete | 2015-12-10 → 2015-12-08 (-2d) | 2015-12-10 → 2015-12-08 (-2d) |  |  |  |
| 156 | **Quality Control** | 2015-12-11 → 2015-12-09 (-2d) | 2015-12-15 → 2015-12-11 (-4d) |  |  |  |
| 157 | Create Quality Report | 2015-12-11 → 2015-12-09 (-2d) | 2015-12-14 → 2015-12-10 (-4d) |  |  |  |
| 158 | Review Quality Report | 2015-12-15 → 2015-12-11 (-4d) | 2015-12-15 → 2015-12-11 (-4d) |  |  |  |
| 159 | Update Quality Report | 2015-12-15 → 2015-12-11 (-4d) | 2015-12-15 → 2015-12-11 (-4d) |  |  |  |
| 160 | Create Progress Report 5 | 2015-12-16 → 2015-12-14 (-2d) | 2015-12-16 → 2015-12-14 (-2d) |  |  |  |
| 161 | Submit Progress Report 5 | 2015-12-16 → 2015-12-14 (-2d) | 2015-12-16 → 2015-12-14 (-2d) |  |  |  |
| 162 | **Termination** | 2015-12-17 → 2015-12-15 (-2d) | 2015-12-28 → 2015-12-25 (-3d) | 8d? → 9d? |  |  |
| 163 | Create lesson learned | 2015-12-17 → 2015-12-15 (-2d) | 2015-12-17 → 2015-12-15 (-2d) |  |  |  |
| 164 | **Final Report Document** | 2015-12-18 → 2015-12-16 (-2d) | 2015-12-22 → 2015-12-18 (-4d) |  |  |  |
| 165 | Create Final Report document | 2015-12-18 → 2015-12-16 (-2d) | 2015-12-22 → 2015-12-18 (-4d) |  |  |  |
| 166 | Create Installing Guide | 2015-12-18 → 2015-12-16 (-2d) | 2015-12-22 → 2015-12-18 (-4d) |  |  |  |
| 167 | Create User Guideline | 2015-12-18 → 2015-12-16 (-2d) | 2015-12-22 → 2015-12-18 (-4d) |  |  |  |
| 168 | Create Project Result Assessment | 2015-12-18 → 2015-12-16 (-2d) | 2015-12-21 → 2015-12-17 (-4d) |  |  |  |
| 169 | Create Slides for Final Presentation | 2015-12-18 → 2015-12-16 (-2d) | 2015-12-22 → 2015-12-18 (-4d) |  |  |  |
| 170 | Submit all Final Documents and Source codes | 2015-12-22 → 2015-12-18 (-4d) | 2015-12-22 → 2015-12-18 (-4d) |  | 4d → 5d |  |
| 171 | **Pre-closing** | 2015-12-23 → 2015-12-21 (-2d) | 2015-12-25 → 2015-12-24 (-1d) | 3d → 4d |  |  |
| 172 | Trainning presentation | 2015-12-23 → 2015-12-21 (-2d) | 2015-12-25 → 2015-12-24 (-1d) | 3d → 4d |  |  |
| 173 | **Closing** | 2015-12-28 → 2015-12-25 (-3d) | 2015-12-28 → 2015-12-25 (-3d) |  |  |  |
| 174 | Presentation for Capstone Project | 2015-12-28 → 2015-12-25 (-3d) | 2015-12-28 → 2015-12-25 (-3d) |  |  |  |
| 175 | Complete Project | 2015-12-28 → 2015-12-25 (-3d) | 2015-12-28 → 2015-12-25 (-3d) |  |  |  |
