# DDL_ProjectSchedule_v1.0_EN

How a schedule from MS Project changed from version to version. A marks actual dates.

## Version 1 (saved 2015-09-18)

Note of the change: change file name project plan

| ID | WBS | Task | Duration | Start | Finish | Predecessors | Total float | Constraint |
| --- | --- | --- | --- | --- | --- | --- | --- | --- |
| 1 | 1 | **Dandelion (DDL)** | 80d? | 2015-09-07 | 2015-12-25 |  | 0d |  |
| 2 | 1.1 | **Initiation** | 12d? | 2015-09-07 | 2015-09-22 |  | 0d |  |
| 3 |  | Form up team roles | 0.5d | 2015-09-07 | 2015-09-07 |  | 0d |  |
| 4 |  | Select project idea | 0.5d | 2015-09-07 | 2015-09-07 | 3 | 0d |  |
| 5 | 1.1.3 | **Develop project idea** | 1d | 2015-09-08 | 2015-09-08 | 4 | 0d |  |
| 6 |  | Define project scope | 0.5d | 2015-09-08 | 2015-09-08 |  | 0d |  |
| 7 |  | Define project features | 0.5d | 2015-09-08 | 2015-09-08 | 6 | 0d |  |
| 8 |  | Kick-off meeting | 1d? | 2015-09-09 | 2015-09-09 | 5 | 0d |  |
| 9 | 1.1.5 | **Environment** | 2d? | 2015-09-10 | 2015-09-11 | 8 | 0d |  |
| 10 |  | Create guideline to install and use tools & environments | 0.5d? | 2015-09-10 | 2015-09-10 |  | 0d |  |
| 11 | 1.1.5.2 | **Install tools & environments** | 1d | 2015-09-10 | 2015-09-11 | 10 | 0d |  |
| 12 |  | Install TortoiseGit | 0.5h | 2015-09-10 | 2015-09-10 |  | 0d |  |
| 13 |  | Install Visual Studio 2013 | 3h | 2015-09-10 | 2015-09-10 | 12 | 0d |  |
| 14 |  | Install Microsoft SQL Server 2010 | 2h | 2015-09-10 | 2015-09-11 | 13 | 0d |  |
| 15 |  | Install Microsoft Project 2013 | 2h | 2015-09-11 | 2015-09-11 | 14 | 0d |  |
| 16 |  | Install Sublime Text | 0.5h | 2015-09-11 | 2015-09-11 | 15 | 0d |  |
| 17 |  | Trainning using tools & environments | 0.5d | 2015-09-11 | 2015-09-11 | 11 | 0d |  |
| 18 | 1.1.6 | **Technology Research (Part 1)** | 7d | 2015-09-14 | 2015-09-22 | 9 | 0d |  |
| 19 |  | Study .net MVC 5 | 7d | 2015-09-14 | 2015-09-22 |  | 0d | start no earlier than 2015-09-14 |
| 20 |  | Study AngularJS | 7d | 2015-09-14 | 2015-09-22 |  | 0d |  |
| 21 |  | Study Bootstraps, HTML5 & CSS3 | 5d | 2015-09-14 | 2015-09-18 |  | 2d |  |
| 22 |  | SRS/PP Review checklist | 0.5d? | 2015-09-10 | 2015-09-10 | 8 | 0d |  |
| 23 | 1.1.8 | **Project Introduction** | 3d | 2015-09-10 | 2015-09-15 | 22 | 2d |  |
| 24 |  | Create Project Introduction | 2d | 2015-09-10 | 2015-09-14 |  | 2d |  |
| 25 |  | Review Project Introduction | 0.5d | 2015-09-14 | 2015-09-14 | 24 | 2d |  |
| 26 |  | Update Project Introduction | 0.5d | 2015-09-15 | 2015-09-15 | 25 | 2d |  |
| 27 |  | Complete Project Introduction | 0d | 2015-09-15 | 2015-09-15 | 26 | 2d |  |
| 28 | 1.1.9 | **Project Plan** | 8d? | 2015-09-10 | 2015-09-22 | 22 | 0d |  |
| 29 |  | Create Project Plan in MS Word | 3d | 2015-09-10 | 2015-09-15 |  | 0d |  |
| 30 |  | Create Project Schedule in .mmp file | 3d | 2015-09-15 | 2015-09-18 | 29 | 0d |  |
| 31 |  | Create CM Plan | 2d | 2015-09-10 | 2015-09-14 |  | 4d |  |
| 32 |  | Review Project Plan, CMPlan, Schedule | 1d | 2015-09-18 | 2015-09-21 | 31, 30 | 0d |  |
| 33 |  | Update Project Plan, CMPlan, Schedule | 1d? | 2015-09-21 | 2015-09-22 | 32 | 0d |  |
| 34 |  | Complete Project Plan | 0d | 2015-09-21 | 2015-09-21 | 32 | 1d |  |
| 35 | 1.1.10 | **User Requirement Specification** | 3d? | 2015-09-15 | 2015-09-18 | 23 | 2d |  |
| 36 |  | Create User Requirement Sepecification | 2d | 2015-09-15 | 2015-09-17 |  | 2d |  |
| 37 |  | Review User Requirement Specification | 0.5d? | 2015-09-17 | 2015-09-17 | 36 | 2d |  |
| 38 |  | Update User Requirement Specification | 0.5d? | 2015-09-18 | 2015-09-18 | 37 | 2d |  |
| 39 |  | Complete User Requirement Specification | 0d | 2015-09-18 | 2015-09-18 | 38 | 2d |  |
| 40 | 1.1.11 | **Q&A Sheet** | 3.5d? | 2015-09-10 | 2015-09-15 | 22 | 4.5d |  |
| 41 |  | Create Q&A sheet | 2d | 2015-09-10 | 2015-09-14 |  | 4.5d |  |
| 42 |  | Review Q&A sheet | 0.5d? | 2015-09-14 | 2015-09-14 | 41 | 4.5d |  |
| 43 |  | Translate Q&A sheet to Japanese | 1d | 2015-09-15 | 2015-09-15 | 42 | 4.5d |  |
| 44 |  | Create progress report 1 | 0.5d | 2015-09-22 | 2015-09-22 | 23, 28, 35, 40 | 0d |  |
| 45 |  | Submit progress report 1 | 0d | 2015-09-22 | 2015-09-22 | 44 | 0d |  |
| 46 | 1.2 | **Solution** | 28d? | 2015-09-23 | 2015-10-30 | 2 | 0d |  |
| 47 | 1.2.1 | **Technology Research (Part 2)** | 3d? | 2015-09-23 | 2015-09-25 |  | 0d |  |
| 48 |  | Code first migration | 2d | 2015-09-23 | 2015-09-24 |  | 2d |  |
| 49 |  | Restful API on .net MVC | 3d | 2015-09-23 | 2015-09-25 |  | 0d |  |
| 50 |  | Payment by BaoKim API | 1d? | 2015-09-23 | 2015-09-23 |  | 0d |  |
| 51 |  | Facebook Login API | 1d? | 2015-09-24 | 2015-09-24 | 50 | 0d |  |
| 52 | 1.2.2 | **Demo & Prototypes** | 9d | 2015-09-23 | 2015-10-05 |  | 19d |  |
| 53 |  | Create Demo | 7d | 2015-09-23 | 2015-10-01 |  | 21d |  |
| 54 |  | Create Prototype | 9d | 2015-09-23 | 2015-10-05 |  | 19d |  |
| 55 | 1.2.3 | **Software Requirement Specification** | 4d | 2015-09-23 | 2015-09-28 |  | 8d |  |
| 56 | 1.2.3.1 | **Non-functional Requirements Specification** | 2d | 2015-09-23 | 2015-09-24 |  | 8d |  |
| 57 |  | Define Security Requirements | 1d | 2015-09-23 | 2015-09-23 |  | 9d |  |
| 58 |  | Define Performane Requirements | 1d | 2015-09-23 | 2015-09-23 |  | 9d |  |
| 59 |  | Define User-interface Requirements | 2d | 2015-09-23 | 2015-09-24 |  | 8d |  |
| 60 | 1.2.3.2 | **Functional Requirements Specification** | 2d | 2015-09-25 | 2015-09-28 | 56 | 8d |  |
| 61 |  | Define User Client Module functional Requirements | 2d | 2015-09-25 | 2015-09-28 |  | 8d |  |
| 62 |  | Define Admin Module functional Requirments | 2d | 2015-09-25 | 2015-09-28 |  | 8d |  |
| 63 | 1.2.4 | **System Design** | 18d? | 2015-09-25 | 2015-10-20 |  | 0d |  |
| 64 |  | Create design review checklist | 1d? | 2015-09-25 | 2015-09-25 | 51 | 0d |  |
| 65 | 1.2.4.2 | **Architectural Design** | 9d? | 2015-09-28 | 2015-10-08 | 64 | 0d |  |
| 66 |  | Define architectural design | 1d | 2015-09-28 | 2015-09-28 | 48 | 1d |  |
| 67 |  | Define system features | 2d | 2015-09-28 | 2015-09-29 | 49 | 0d |  |
| 68 |  | Study and choose suitable architectural design | 2d | 2015-09-30 | 2015-10-01 | 67, 66 | 0d |  |
| 69 |  | Create Architectural design | 3d | 2015-10-02 | 2015-10-06 | 68 | 0d |  |
| 70 |  | Review architectural design | 1d | 2015-10-07 | 2015-10-07 | 69 | 0d |  |

| ID | WBS | Task | Duration | Start | Finish | Predecessors | Total float |
| --- | --- | --- | --- | --- | --- | --- | --- |
| 71 |  | Update Architectural Design | 1d? | 2015-10-08 | 2015-10-08 | 70 | 0d |
| 72 |  | Complete Architectural Design version 1.0 | 0d | 2015-10-07 | 2015-10-07 | 70 | 1d |
| 73 | 1.2.4.3 | **Screen design** | 9d? | 2015-09-29 | 2015-10-09 | 55 | 15d |
| 74 |  | Create screen flow document | 2d | 2015-09-29 | 2015-09-30 |  | 15d |
| 75 |  | Create client screen design | 5d | 2015-10-01 | 2015-10-07 | 74 | 15d |
| 76 |  | Create admin screen design | 5d | 2015-10-01 | 2015-10-07 | 74 | 15d |
| 77 |  | Review screen design | 1d? | 2015-10-08 | 2015-10-08 | 76, 75 | 15d |
| 78 |  | Update screen design | 1d? | 2015-10-09 | 2015-10-09 | 77 | 15d |
| 79 |  | Complete screen design | 0d | 2015-10-09 | 2015-10-09 | 78 | 15d |
| 80 | 1.2.4.4 | **Database design** | 4.5d? | 2015-09-29 | 2015-10-05 | 55 | 19.5d |
| 81 |  | Create database design | 3d | 2015-09-29 | 2015-10-01 |  | 19.5d |
| 82 |  | Review database design | 0.5d? | 2015-10-02 | 2015-10-02 | 81 | 19.5d |
| 83 |  | Update database design | 1d | 2015-10-02 | 2015-10-05 | 82 | 19.5d |
| 84 |  | Complete database design | 0d | 2015-10-05 | 2015-10-05 | 83 | 19.5d |
| 85 | 1.2.4.5 | **Class/Component Design** | 8d? | 2015-10-09 | 2015-10-20 | 65, 55 | 0d |
| 86 |  | Define Class and Component | 2d | 2015-10-09 | 2015-10-12 |  | 0d |
| 87 |  | Create Class/component design | 4d | 2015-10-13 | 2015-10-16 | 86 | 0d |
| 88 |  | Review Class/component design | 1d? | 2015-10-19 | 2015-10-19 | 87 | 0d |
| 89 |  | Update Class/component design | 1d? | 2015-10-20 | 2015-10-20 | 88 | 0d |
| 90 |  | Complete Class/component design | 0d | 2015-10-20 | 2015-10-20 | 89 | 0d |
| 91 |  | Create progress report 2 | 1d | 2015-10-21 | 2015-10-21 | 85 | 0d |
| 92 |  | Submit progress report 2 | 0d | 2015-10-21 | 2015-10-21 | 91 | 0d |
| 93 | 1.2.7 | **Testing** | 6d? | 2015-10-22 | 2015-10-29 | 92 | 0d |
| 94 |  | Create test plan/case checklists | 1d | 2015-10-22 | 2015-10-22 |  | 0d |
| 95 |  | Create test plan | 3d | 2015-10-23 | 2015-10-27 | 94 | 0d |
| 96 |  | Review test plan | 1d | 2015-10-28 | 2015-10-28 | 95 | 0d |
| 97 |  | Update test plan | 1d? | 2015-10-29 | 2015-10-29 | 96 | 0d |
| 98 |  | Test plan complete | 0d | 2015-10-29 | 2015-10-29 | 97 | 0d |
| 99 |  | Create progress report 3 | 1d? | 2015-10-30 | 2015-10-30 | 93 | 0d |
| 100 |  | Submit progress report 3 | 0d | 2015-10-30 | 2015-10-30 | 99 | 0d |
| 101 | 1.3 | **Construction** | 31d? | 2015-11-02 | 2015-12-14 | 46 | 0d |
| 102 | 1.3.1 | **Define Coding Standards** | 1d? | 2015-11-02 | 2015-11-02 |  | 0d |
| 103 |  | Create Coding Convention | 1d? | 2015-11-02 | 2015-11-02 |  | 7d |
| 104 |  | Create Code & UT Test review checklist | 1d? | 2015-11-02 | 2015-11-02 |  | 0d |
| 105 | 1.3.2 | **Screen Design** | 2d | 2015-11-02 | 2015-11-03 |  | 8d |
| 106 |  | Refine screen design document and prototype | 2d | 2015-11-02 | 2015-11-03 |  | 9d |
| 107 | 1.3.3 | **Coding & Unit test** | 20d | 2015-11-03 | 2015-11-30 |  | 6d |
| 108 |  | Structure core modules & source code common | 3d | 2015-11-03 | 2015-11-05 | 103 | 6d |
| 109 | 1.3.3.2 | **Client User Module** | 11d | 2015-11-06 | 2015-11-20 | 108, 105, 102 | 6d |
| 110 |  | Home Page Module | 3d | 2015-11-06 | 2015-11-10 |  | 10d |
| 111 |  | Login/ Logout Module | 2d | 2015-11-11 | 2015-11-12 | 110 | 10d |
| 112 | 1.3.3.2.3 | **Project module** | 9d | 2015-11-06 | 2015-11-18 |  | 6d |
| 113 |  | Create/manage a project Module | 5d | 2015-11-06 | 2015-11-12 |  | 6d |
| 114 |  | View/Back a project Module | 4d | 2015-11-13 | 2015-11-18 | 113 | 6d |
| 115 |  | User Personal Page Module | 3d | 2015-11-06 | 2015-11-10 |  | 8d |
| 116 |  | Search Module | 2d | 2015-11-19 | 2015-11-20 | 112 | 6d |
| 117 |  | Message Module | 4d | 2015-11-11 | 2015-11-16 | 115 | 8d |
| 118 | 1.3.3.3 | **Admin Module** | 12d | 2015-11-13 | 2015-11-30 | 108, 105, 102 | 6d |
| 119 |  | Login/ Logout module | 2d | 2015-11-13 | 2015-11-16 | 111 | 10d |
| 120 |  | Manage Users Module | 5d | 2015-11-17 | 2015-11-23 | 117 | 8d |
| 121 |  | Manage Projects Module | 6d | 2015-11-23 | 2015-11-30 | 116 | 6d |
| 122 |  | Manage Backings Module | 3d | 2015-11-17 | 2015-11-19 | 119 | 10d |
| 123 |  | Manage Categories Module | 3d | 2015-11-20 | 2015-11-24 | 122 | 10d |
| 124 |  | Mangage Silder Module | 3d | 2015-11-24 | 2015-11-26 | 120 | 8d |
| 125 |  | Complete Coding | 0d | 2015-11-30 | 2015-11-30 | 109, 118 | 6d |
| 126 |  | Create Progress Report 4 | 1d? | 2015-12-01 | 2015-12-01 | 105, 107 | 9d |
| 127 |  | Submit Progress Report 4 | 0d | 2015-12-01 | 2015-12-01 | 126 | 9d |
| 128 | 1.3.6 | **Testing** | 26d? | 2015-11-03 | 2015-12-08 |  | 0d |
| 129 | 1.3.6.1 | **Writing test case (continue)** | 10d? | 2015-11-03 | 2015-11-16 | 104 | 0d |
| 130 | 1.3.6.1.1 | **System test case** | 5d? | 2015-11-03 | 2015-11-09 |  | 0d |
| 131 |  | Create system test case | 3d | 2015-11-03 | 2015-11-05 |  | 0d |
| 132 |  | Review system test case | 1d? | 2015-11-06 | 2015-11-06 | 131 | 0d |
| 133 |  | Update system test case | 1d? | 2015-11-09 | 2015-11-09 | 132 | 0d |
| 134 | 1.3.6.1.2 | **Integration test case** | 5d? | 2015-11-10 | 2015-11-16 | 130 | 0d |
| 135 |  | Create integration test case | 3d | 2015-11-10 | 2015-11-12 |  | 0d |
| 136 |  | Review integration test case | 1d? | 2015-11-13 | 2015-11-13 | 135 | 0d |
| 137 |  | Update integration test case | 1d? | 2015-11-16 | 2015-11-16 | 136 | 0d |
| 138 |  | Writing test case complete | 0d | 2015-11-16 | 2015-11-16 | 134 | 0d |
| 139 | 1.3.6.2 | **Execute Test Round 1** | 8d | 2015-11-17 | 2015-11-26 | 129 | 0d |
| 140 |  | Execute Component Test | 2d | 2015-11-17 | 2015-11-18 |  | 0d |

| ID | WBS | Task | Duration | Start | Finish | Predecessors | Total float |
| --- | --- | --- | --- | --- | --- | --- | --- |
| 141 |  | Fix bug Component Test | 2d | 2015-11-19 | 2015-11-20 | 140 | 11d |
| 142 |  | Execute Integration Test | 2d | 2015-11-19 | 2015-11-20 | 140 | 0d |
| 143 |  | Fix bug Integration Test | 2d | 2015-11-23 | 2015-11-24 | 142 | 9d |
| 144 |  | Execute System Test | 2d | 2015-11-23 | 2015-11-24 | 142 | 0d |
| 145 |  | Fix bug System Test | 2d | 2015-11-25 | 2015-11-26 | 144 | 7d |
| 146 |  | Update Test Case | 1d | 2015-11-25 | 2015-11-25 | 144 | 0d |
| 147 | 1.3.6.4 | **Execute Test Round 2** | 8d | 2015-11-26 | 2015-12-07 | 146 | 0d |
| 148 |  | Execute Component Test | 2d | 2015-11-26 | 2015-11-27 |  | 0d |
| 149 |  | Fix bug Component Test | 2d | 2015-11-30 | 2015-12-01 | 148 | 4d |
| 150 |  | Execute Integration Test | 2d | 2015-11-30 | 2015-12-01 | 148 | 0d |
| 151 |  | Fix bug Integration Test | 2d | 2015-12-02 | 2015-12-03 | 150 | 2d |
| 152 |  | Execute System Test | 2d | 2015-12-02 | 2015-12-03 | 150 | 0d |
| 153 |  | Fix bug System Test | 2d | 2015-12-04 | 2015-12-07 | 152 | 0d |
| 154 |  | Create Test Report | 1d | 2015-12-08 | 2015-12-08 | 139, 147 | 0d |
| 155 |  | Testing Complete | 0d | 2015-12-08 | 2015-12-08 | 154 | 0d |
| 156 | 1.3.7 | **Quality Control** | 3d | 2015-12-09 | 2015-12-11 | 128, 107 | 0d |
| 157 |  | Create Quality Report | 2d | 2015-12-09 | 2015-12-10 |  | 0d |
| 158 |  | Review Quality Report | 0.5d | 2015-12-11 | 2015-12-11 | 157 | 0d |
| 159 |  | Update Quality Report | 0.5d | 2015-12-11 | 2015-12-11 | 158 | 0d |
| 160 |  | Create Progress Report 5 | 1d? | 2015-12-14 | 2015-12-14 | 156 | 0d |
| 161 |  | Submit Progress Report 5 | 0d | 2015-12-14 | 2015-12-14 | 160 | 0d |
| 162 | 1.4 | **Termination** | 9d? | 2015-12-15 | 2015-12-25 | 101 | 0d |
| 163 |  | Create lesson learned | 1d | 2015-12-15 | 2015-12-15 |  | 0d |
| 164 | 1.4.2 | **Final Report Document** | 3d | 2015-12-16 | 2015-12-18 | 163 | 0d |
| 165 |  | Create Final Report document | 3d | 2015-12-16 | 2015-12-18 |  | 0d |
| 166 |  | Create Installing Guide | 3d | 2015-12-16 | 2015-12-18 |  | 0d |
| 167 |  | Create User Guideline | 3d | 2015-12-16 | 2015-12-18 |  | 0d |
| 168 |  | Create Project Result Assessment | 2d | 2015-12-16 | 2015-12-17 |  | 1d |
| 169 |  | Create Slides for Final Presentation | 3d | 2015-12-16 | 2015-12-18 |  | 0d |
| 170 |  | Submit all Final Documents and Source codes | 0d | 2015-12-18 | 2015-12-18 | 164 | 5d |
| 171 | 1.4.4 | **Pre-closing** | 4d | 2015-12-21 | 2015-12-24 |  | 0d |
| 172 |  | Trainning presentation | 4d | 2015-12-21 | 2015-12-24 | 164 | 0d |
| 173 | 1.4.5 | **Closing** | 1d? | 2015-12-25 | 2015-12-25 | 172 | 0d |
| 174 |  | Presentation for Capstone Project | 1d? | 2015-12-25 | 2015-12-25 |  | 0d |
| 175 |  | Complete Project | 0d | 2015-12-25 | 2015-12-25 | 174 | 0d |

## Version 2 (saved 2015-09-19)

Note of the change: update schedule and plan

Last finish stays 2015-12-25.

Changed:

| ID | Task | Start | Finish | Duration | Total float |
| --- | --- | --- | --- | --- | --- |
| 46 | **Solution** |  | 2015-10-30 → 2015-10-28 (-2d) | 28d? → 26d? |  |
| 63 | **System Design** |  | 2015-10-20 → 2015-10-16 (-4d) | 18d? → 16d? |  |
| 85 | **Class/Component Design** |  | 2015-10-20 → 2015-10-16 (-4d) | 8d? → 6d? |  |
| 86 | Define Class and Component |  | 2015-10-12 → 2015-10-09 (-3d) | 2d → 1d |  |
| 87 | Create Class/component design | 2015-10-13 → 2015-10-12 (-1d) | 2015-10-16 → 2015-10-14 (-2d) | 4d → 3d |  |
| 88 | Review Class/component design | 2015-10-19 → 2015-10-15 (-4d) | 2015-10-19 → 2015-10-15 (-4d) |  |  |
| 89 | Update Class/component design | 2015-10-20 → 2015-10-16 (-4d) | 2015-10-20 → 2015-10-16 (-4d) |  |  |
| 90 | Complete Class/component design | 2015-10-20 → 2015-10-16 (-4d) | 2015-10-20 → 2015-10-16 (-4d) |  |  |
| 91 | Create progress report 2 | 2015-10-21 → 2015-10-19 (-2d) | 2015-10-21 → 2015-10-19 (-2d) |  |  |
| 92 | Submit progress report 2 | 2015-10-21 → 2015-10-19 (-2d) | 2015-10-21 → 2015-10-19 (-2d) |  |  |
| 93 | **Testing** | 2015-10-22 → 2015-10-20 (-2d) | 2015-10-29 → 2015-10-27 (-2d) |  |  |
| 94 | Create test plan/case checklists | 2015-10-22 → 2015-10-20 (-2d) | 2015-10-22 → 2015-10-20 (-2d) |  |  |
| 95 | Create test plan | 2015-10-23 → 2015-10-21 (-2d) | 2015-10-27 → 2015-10-23 (-4d) |  |  |
| 96 | Review test plan | 2015-10-28 → 2015-10-26 (-2d) | 2015-10-28 → 2015-10-26 (-2d) |  |  |
| 97 | Update test plan | 2015-10-29 → 2015-10-27 (-2d) | 2015-10-29 → 2015-10-27 (-2d) |  |  |
| 98 | Test plan complete | 2015-10-29 → 2015-10-27 (-2d) | 2015-10-29 → 2015-10-27 (-2d) |  |  |
| 99 | Create progress report 3 | 2015-10-30 → 2015-10-28 (-2d) | 2015-10-30 → 2015-10-28 (-2d) |  |  |
| 100 | Submit progress report 3 | 2015-10-30 → 2015-10-28 (-2d) | 2015-10-30 → 2015-10-28 (-2d) |  |  |
| 101 | **Construction** | 2015-11-02 → 2015-10-29 (-4d) | 2015-12-14 → 2015-12-10 (-4d) |  |  |
| 102 | **Define Coding Standards** | 2015-11-02 → 2015-10-29 (-4d) | 2015-11-02 → 2015-10-29 (-4d) |  |  |
| 103 | Create Coding Convention | 2015-11-02 → 2015-10-29 (-4d) | 2015-11-02 → 2015-10-29 (-4d) |  | 7d → 8d |
| 104 | Create Code & UT Test review checklist | 2015-11-02 → 2015-10-29 (-4d) | 2015-11-02 → 2015-10-29 (-4d) |  |  |
| 105 | **Screen Design** | 2015-11-02 → 2015-10-29 (-4d) | 2015-11-03 → 2015-10-30 (-4d) |  | 8d → 10d |
| 106 | Refine screen design document and prototype | 2015-11-02 → 2015-10-29 (-4d) | 2015-11-03 → 2015-10-30 (-4d) |  | 9d → 10d |
| 107 | **Coding & Unit test** | 2015-11-03 → 2015-10-30 (-4d) | 2015-11-30 → 2015-11-24 (-6d) | 20d → 18d | 6d → 8d |
| 108 | Structure core modules & source code common | 2015-11-03 → 2015-10-30 (-4d) | 2015-11-05 → 2015-11-03 (-2d) |  | 6d → 8d |
| 109 | **Client User Module** | 2015-11-06 → 2015-11-04 (-2d) | 2015-11-20 → 2015-11-17 (-3d) | 11d → 10d | 6d → 8d |
| 110 | Home Page Module | 2015-11-06 → 2015-11-04 (-2d) | 2015-11-10 → 2015-11-06 (-4d) |  |  |
| 111 | Login/ Logout Module | 2015-11-11 → 2015-11-09 (-2d) | 2015-11-12 → 2015-11-10 (-2d) |  |  |
| 112 | **Project module** | 2015-11-06 → 2015-11-04 (-2d) | 2015-11-18 → 2015-11-13 (-5d) | 9d → 8d | 6d → 8d |
| 113 | Create/manage a project Module | 2015-11-06 → 2015-11-04 (-2d) | 2015-11-12 → 2015-11-10 (-2d) |  | 6d → 8d |
| 114 | View/Back a project Module | 2015-11-13 → 2015-11-11 (-2d) | 2015-11-18 → 2015-11-13 (-5d) | 4d → 3d | 6d → 8d |
| 115 | User Personal Page Module | 2015-11-06 → 2015-11-04 (-2d) | 2015-11-10 → 2015-11-06 (-4d) |  | 8d → 9d |
| 116 | Search Module | 2015-11-19 → 2015-11-16 (-3d) | 2015-11-20 → 2015-11-17 (-3d) |  | 6d → 8d |
| 117 | Message Module | 2015-11-11 → 2015-11-09 (-2d) | 2015-11-16 → 2015-11-12 (-4d) |  | 8d → 9d |
| 118 | **Admin Module** | 2015-11-13 → 2015-11-11 (-2d) | 2015-11-30 → 2015-11-24 (-6d) | 12d → 10d | 6d → 8d |
| 119 | Login/ Logout module | 2015-11-13 → 2015-11-11 (-2d) | 2015-11-16 → 2015-11-12 (-4d) |  |  |
| 120 | Manage Users Module | 2015-11-17 → 2015-11-13 (-4d) | 2015-11-23 → 2015-11-18 (-5d) | 5d → 4d | 8d → 9d |
| 121 | Manage Projects Module | 2015-11-23 → 2015-11-18 (-5d) | 2015-11-30 → 2015-11-24 (-6d) | 6d → 5d | 6d → 8d |
| 122 | Manage Backings Module | 2015-11-17 → 2015-11-13 (-4d) | 2015-11-19 → 2015-11-17 (-2d) |  |  |
| 123 | Manage Categories Module | 2015-11-20 → 2015-11-18 (-2d) | 2015-11-24 → 2015-11-20 (-4d) |  |  |
| 124 | Mangage Silder Module | 2015-11-24 → 2015-11-19 (-5d) | 2015-11-26 → 2015-11-23 (-3d) |  | 8d → 9d |
| 125 | Complete Coding | 2015-11-30 → 2015-11-24 (-6d) | 2015-11-30 → 2015-11-24 (-6d) |  | 6d → 8d |
| 126 | Create Progress Report 4 | 2015-12-01 → 2015-11-25 (-6d) | 2015-12-01 → 2015-11-25 (-6d) |  | 9d → 11d |
| 127 | Submit Progress Report 4 | 2015-12-01 → 2015-11-25 (-6d) | 2015-12-01 → 2015-11-25 (-6d) |  | 9d → 11d |
| 128 | **Testing** | 2015-11-03 → 2015-10-30 (-4d) | 2015-12-08 → 2015-12-04 (-4d) |  |  |
| 129 | **Writing test case (continue)** | 2015-11-03 → 2015-10-30 (-4d) | 2015-11-16 → 2015-11-12 (-4d) |  |  |
| 130 | **System test case** | 2015-11-03 → 2015-10-30 (-4d) | 2015-11-09 → 2015-11-05 (-4d) |  |  |
| 131 | Create system test case | 2015-11-03 → 2015-10-30 (-4d) | 2015-11-05 → 2015-11-03 (-2d) |  |  |
| 132 | Review system test case | 2015-11-06 → 2015-11-04 (-2d) | 2015-11-06 → 2015-11-04 (-2d) |  |  |
| 133 | Update system test case | 2015-11-09 → 2015-11-05 (-4d) | 2015-11-09 → 2015-11-05 (-4d) |  |  |
| 134 | **Integration test case** | 2015-11-10 → 2015-11-06 (-4d) | 2015-11-16 → 2015-11-12 (-4d) |  |  |
| 135 | Create integration test case | 2015-11-10 → 2015-11-06 (-4d) | 2015-11-12 → 2015-11-10 (-2d) |  |  |
| 136 | Review integration test case | 2015-11-13 → 2015-11-11 (-2d) | 2015-11-13 → 2015-11-11 (-2d) |  |  |
| 137 | Update integration test case | 2015-11-16 → 2015-11-12 (-4d) | 2015-11-16 → 2015-11-12 (-4d) |  |  |
| 138 | Writing test case complete | 2015-11-16 → 2015-11-12 (-4d) | 2015-11-16 → 2015-11-12 (-4d) |  |  |
| 139 | **Execute Test Round 1** | 2015-11-17 → 2015-11-13 (-4d) | 2015-11-26 → 2015-11-24 (-2d) |  |  |
| 140 | Execute Component Test | 2015-11-17 → 2015-11-13 (-4d) | 2015-11-18 → 2015-11-16 (-2d) |  |  |
| 141 | Fix bug Component Test | 2015-11-19 → 2015-11-17 (-2d) | 2015-11-20 → 2015-11-18 (-2d) |  |  |
| 142 | Execute Integration Test | 2015-11-19 → 2015-11-17 (-2d) | 2015-11-20 → 2015-11-18 (-2d) |  |  |
| 143 | Fix bug Integration Test | 2015-11-23 → 2015-11-19 (-4d) | 2015-11-24 → 2015-11-20 (-4d) |  |  |
| 144 | Execute System Test | 2015-11-23 → 2015-11-19 (-4d) | 2015-11-24 → 2015-11-20 (-4d) |  |  |
| 145 | Fix bug System Test | 2015-11-25 → 2015-11-23 (-2d) | 2015-11-26 → 2015-11-24 (-2d) |  |  |
| 146 | Update Test Case | 2015-11-25 → 2015-11-23 (-2d) | 2015-11-25 → 2015-11-23 (-2d) |  |  |
| 147 | **Execute Test Round 2** | 2015-11-26 → 2015-11-24 (-2d) | 2015-12-07 → 2015-12-03 (-4d) |  |  |
| 148 | Execute Component Test | 2015-11-26 → 2015-11-24 (-2d) | 2015-11-27 → 2015-11-25 (-2d) |  |  |
| 149 | Fix bug Component Test | 2015-11-30 → 2015-11-26 (-4d) | 2015-12-01 → 2015-11-27 (-4d) |  |  |
| 150 | Execute Integration Test | 2015-11-30 → 2015-11-26 (-4d) | 2015-12-01 → 2015-11-27 (-4d) |  |  |
| 151 | Fix bug Integration Test | 2015-12-02 → 2015-11-30 (-2d) | 2015-12-03 → 2015-12-01 (-2d) |  |  |
| 152 | Execute System Test | 2015-12-02 → 2015-11-30 (-2d) | 2015-12-03 → 2015-12-01 (-2d) |  |  |

| ID | Task | Start | Finish | Duration | Total float |
| --- | --- | --- | --- | --- | --- |
| 153 | Fix bug System Test | 2015-12-04 → 2015-12-02 (-2d) | 2015-12-07 → 2015-12-03 (-4d) |  |  |
| 154 | Create Test Report | 2015-12-08 → 2015-12-04 (-4d) | 2015-12-08 → 2015-12-04 (-4d) |  |  |
| 155 | Testing Complete | 2015-12-08 → 2015-12-04 (-4d) | 2015-12-08 → 2015-12-04 (-4d) |  |  |
| 156 | **Quality Control** | 2015-12-09 → 2015-12-07 (-2d) | 2015-12-11 → 2015-12-09 (-2d) |  |  |
| 157 | Create Quality Report | 2015-12-09 → 2015-12-07 (-2d) | 2015-12-10 → 2015-12-08 (-2d) |  |  |
| 158 | Review Quality Report | 2015-12-11 → 2015-12-09 (-2d) | 2015-12-11 → 2015-12-09 (-2d) |  |  |
| 159 | Update Quality Report | 2015-12-11 → 2015-12-09 (-2d) | 2015-12-11 → 2015-12-09 (-2d) |  |  |
| 160 | Create Progress Report 5 | 2015-12-14 → 2015-12-10 (-4d) | 2015-12-14 → 2015-12-10 (-4d) |  |  |
| 161 | Submit Progress Report 5 | 2015-12-14 → 2015-12-10 (-4d) | 2015-12-14 → 2015-12-10 (-4d) |  |  |
| 162 | **Termination** | 2015-12-15 → 2015-12-11 (-4d) |  | 9d? → 11d |  |
| 163 | Create lesson learned | 2015-12-15 → 2015-12-11 (-4d) | 2015-12-15 → 2015-12-11 (-4d) |  |  |
| 164 | **Final Report Document** | 2015-12-16 → 2015-12-14 (-2d) | 2015-12-18 → 2015-12-15 (-3d) | 3d → 2d |  |
| 165 | Create Final Report document | 2015-12-16 → 2015-12-14 (-2d) | 2015-12-18 → 2015-12-15 (-3d) | 3d → 2d |  |
| 166 | Create Installing Guide | 2015-12-16 → 2015-12-14 (-2d) | 2015-12-18 → 2015-12-15 (-3d) | 3d → 2d |  |
| 167 | Create User Guideline | 2015-12-16 → 2015-12-14 (-2d) | 2015-12-18 → 2015-12-15 (-3d) | 3d → 2d |  |
| 168 | Create Project Result Assessment | 2015-12-16 → 2015-12-14 (-2d) | 2015-12-17 → 2015-12-15 (-2d) |  | 1d → 0d |
| 169 | Create Slides for Final Presentation | 2015-12-16 → 2015-12-14 (-2d) | 2015-12-18 → 2015-12-15 (-3d) | 3d → 2d |  |
| 170 | Submit all Final Documents and Source codes | 2015-12-18 → 2015-12-15 (-3d) | 2015-12-18 → 2015-12-15 (-3d) |  | 5d → 8d |
| 171 | **Pre-closing** | 2015-12-21 → 2015-12-16 (-5d) | 2015-12-24 → 2015-12-22 (-2d) | 4d → 5d |  |
| 172 | Trainning presentation | 2015-12-21 → 2015-12-16 (-5d) | 2015-12-24 → 2015-12-22 (-2d) | 4d → 5d |  |
| 173 | **Closing** | 2015-12-25 → 2015-12-23 (-2d) |  | 1d? → 3d |  |
| 174 | Presentation for Capstone Project | 2015-12-25 → 2015-12-23 (-2d) |  | 1d? → 3d |  |

## Version 3 (saved 2015-12-09)

Note of the change: Merge branch 'master' of https://github.com/sangnvus/2015FALLJS01

Last finish stays 2015-12-25.

Removed: 140 Execute Component Test; 141 Fix bug Component Test; 148 Execute Component Test; 149 Fix bug Component Test

Changed:

| ID | Task | Start | Finish | Duration | Total float | Predecessors |
| --- | --- | --- | --- | --- | --- | --- |
| 140 | Execute Integration Test | 2015-11-17 → 2015-11-13 (-4d) | 2015-11-18 → 2015-11-17 (-1d) | 2d → 3d |  | Execute Component Test → none |
| 141 | Fix bug Integration Test | 2015-11-19 → 2015-11-18 (-1d) | 2015-11-20 → 2015-11-19 (-1d) |  | 9d → 10d |  |
| 142 | Execute System Test | 2015-11-19 → 2015-11-18 (-1d) |  | 2d → 3d |  |  |
| 146 | Execute Integration Test | 2015-11-26 → 2015-11-24 (-2d) | 2015-11-27 → 2015-11-26 (-1d) | 2d → 3d |  | Execute Component Test → none |
| 147 | Fix bug Integration Test | 2015-11-30 → 2015-11-27 (-3d) | 2015-12-01 → 2015-11-30 (-1d) |  | 2d → 3d |  |
| 148 | Execute System Test | 2015-11-30 → 2015-11-27 (-3d) |  | 2d → 3d |  |  |
